# Hotomoto

Schedule from MS Project, 2007-05-07 to 2007-07-06, status date 2007-05-23, A marks actual dates.

## Calendars

- HOTOMOTO: Mon-Sat 08:30-12:00, 13:00-18:00; Sun off.

## Resources

| Resource |
| --- |
| Serkan Yılmaz |
| Burak Uçakan |

## Schedule

| ID | WBS | Task | Duration | Start | Finish | Predecessors | Complete | Remaining | Total slack | Free slack | Resources | Work | Actual work |
| --- | --- | --- | --- | --- | --- | --- | --- | --- | --- | --- | --- | --- | --- |
| 1 | 1 | **Analiz** | 16d | 2007-05-07 08:30 A | 2007-05-24 09:00 A |  | 100% |  |  |  |  | 128h | 128h |
| 2 | 1.1 | Feature-list çıkarılması | 2d | 2007-05-07 08:30 A | 2007-05-08 17:00 A |  | 100% |  |  |  | Serkan Yılmaz | 16h | 16h |
| 3 | 1.2 | Sipariş ve stok işlemleri analizi | 1d | 2007-05-08 17:00 A | 2007-05-09 16:30 A | 2 | 100% |  |  |  | Serkan Yılmaz | 8h | 8h |
| 4 | 1.3 | Veritabanı tasarımı | 8d | 2007-05-09 16:30 A | 2007-05-18 11:30 A | 3 | 100% |  |  |  | Serkan Yılmaz | 64h | 64h |
| 5 | 1.4 | Veritabanı oluşturulması | 5d | 2007-05-18 11:30 A | 2007-05-24 09:00 A | 4 | 100% |  |  |  | Serkan Yılmaz | 40h | 40h |
| 6 | 2 | **Planlama** | 3d | 2007-05-24 09:00 A | 2007-05-26 17:00 | 1 | 67% | 1d | 0d |  |  | 24h | 16h |
| 7 | 2.1 | Proje maddelerinin çıkarılması (ADMIN) | 1d | 2007-05-24 09:00 A | 2007-05-24 18:00 A |  | 100% |  |  |  | Serkan Yılmaz | 8h | 8h |
| 8 | 2.2 | Proje maddelerinin çıkarılması (B2B) | 1d | 2007-05-25 08:30 A | 2007-05-25 17:30 A | 7 | 100% |  |  |  | Serkan Yılmaz | 8h | 8h |
| 9 | 2.3 | Görev sürelerinin ayarlanması | 4h | 2007-05-25 17:30 | 2007-05-26 12:00 | 8 |  |  | 0d |  | Serkan Yılmaz | 4h |  |
| 10 | 2.4 | Görevlere kaynak atanması | 4h | 2007-05-26 13:00 | 2007-05-26 17:00 | 9 |  |  | 0d |  | Serkan Yılmaz | 4h |  |
| 11 | 3 | **Programlama** | 29.81d | 2007-05-26 17:00 | 2007-06-28 17:30 | 6 |  |  | 0d |  |  | 357.03h |  |
| 12 | 3.1 | **HOTOMOTO** | 29.81d | 2007-05-26 17:00 | 2007-06-28 17:30 |  |  |  | 0d |  |  | 357.03h |  |
| 13 | 3.1.1 | **B2B** | 15.19d | 2007-05-26 17:00 | 2007-06-13 10:02 |  |  |  | 18.62d | 0d |  | 121.53h |  |
| 14 | 3.1.1.1 | **Login** | 0.42d | 2007-05-26 17:00 | 2007-05-28 10:50 |  |  |  | 18.62d | 0d |  | 3.33h |  |
| 15 | 3.1.1.1.1 | Login sayfası | 2h | 2007-05-26 17:00 | 2007-05-28 09:30 |  |  |  | 18.62d | 0d | Burak Uçakan | 2h |  |
| 16 | 3.1.1.1.2 | Validasyonlar | 20min | 2007-05-28 09:30 | 2007-05-28 09:50 | 15 |  |  | 18.62d | 0d | Burak Uçakan | 0.33h |  |
| 17 | 3.1.1.1.3 | Sessiona kullanıcı ve müşteri bilgilerinin doldurulması | 1h | 2007-05-28 09:50 | 2007-05-28 10:50 | 16 |  |  | 18.62d |  | Burak Uçakan | 1h |  |
| 18 | 3.1.1.2 | **Şifremi unuttum** | 0.38d | 2007-05-28 10:50 | 2007-05-28 14:50 | 14 |  |  | 18.62d | 0d |  | 3h |  |
| 19 | 3.1.1.2.1 | Şifremi unuttum sayfası | 1h | 2007-05-28 10:50 | 2007-05-28 11:50 |  |  |  | 18.62d | 0d | Burak Uçakan | 1h |  |
| 20 | 3.1.1.2.2 | Kullanıcı doğrulaması | 30min | 2007-05-28 11:50 | 2007-05-28 13:20 | 19 |  |  | 18.62d | 0d | Burak Uçakan | 0.5h |  |
| 21 | 3.1.1.2.3 | Kullanıcıya maille yeni şifre gönderimi | 30min | 2007-05-28 13:20 | 2007-05-28 13:50 | 20 |  |  | 18.62d | 0d | Burak Uçakan | 0.5h |  |
| 22 | 3.1.1.2.4 | Kullanıcı siteye ilk girdiğinde şifre değiştirme? Opsiyonel | 1h | 2007-05-28 13:50 | 2007-05-28 14:50 | 21 |  |  | 18.62d |  | Burak Uçakan | 1h |  |
| 23 | 3.1.1.3 | **Anasayfa** | 1d | 2007-05-28 14:50 | 2007-05-29 14:20 | 18 |  |  | 18.62d | 0d |  | 8h |  |
| 24 | 3.1.1.3.1 | Ana sayfa (html) | 5h | 2007-05-28 14:50 | 2007-05-29 10:20 |  |  |  | 18.62d | 0d | Burak Uçakan | 5h |  |
| 25 | 3.1.1.3.2 | Menu | 40min | 2007-05-29 10:20 | 2007-05-29 11:00 | 24 |  |  | 18.62d | 0d | Burak Uçakan | 0.67h |  |
| 26 | 3.1.1.3.3 | Kullanıcı bilgisi | 30min | 2007-05-29 11:00 | 2007-05-29 11:30 | 25 |  |  | 18.62d | 0d | Burak Uçakan | 0.5h |  |
| 27 | 3.1.1.3.4 | Hızlı erişim | 40min | 2007-05-29 11:30 | 2007-05-29 13:10 | 26 |  |  | 18.62d | 0d | Burak Uçakan | 0.67h |  |
| 28 | 3.1.1.3.5 | İpucu | 20min | 2007-05-29 13:10 | 2007-05-29 13:30 | 27 |  |  | 18.62d | 0d | Burak Uçakan | 0.33h |  |
| 29 | 3.1.1.3.6 | Ip ve bağlı olma süresi | 20min | 2007-05-29 13:30 | 2007-05-29 13:50 | 28 |  |  | 18.62d | 0d | Burak Uçakan | 0.33h |  |
| 30 | 3.1.1.3.7 | Footer | 30min | 2007-05-29 13:50 | 2007-05-29 14:20 | 29 |  |  | 18.62d |  | Burak Uçakan | 0.5h |  |

| ID | WBS | Task | Duration | Start | Finish | Predecessors | Total slack | Free slack | Resources | Work |
| --- | --- | --- | --- | --- | --- | --- | --- | --- | --- | --- |
| 31 | 3.1.1.4 | **Mesaj Kutusu** | 0.58d | 2007-05-29 14:20 | 2007-05-30 09:30 | 23 | 18.62d | 0d |  | 4.67h |
| 32 | 3.1.1.4.1 | Mesaj başlıkları | 1h | 2007-05-29 14:20 | 2007-05-29 15:20 |  | 18.62d | 0d | Burak Uçakan | 1h |
| 33 | 3.1.1.4.2 | Mesaj detayı | 1h | 2007-05-29 15:20 | 2007-05-29 16:20 | 32 | 18.62d | 0d | Burak Uçakan | 1h |
| 34 | 3.1.1.4.3 | Mesaja cevap ver | 2h | 2007-05-29 16:20 | 2007-05-30 08:50 | 33 | 18.62d | 0d | Burak Uçakan | 2h |
| 35 | 3.1.1.4.4 | Mesaj sil | 40min | 2007-05-30 08:50 | 2007-05-30 09:30 | 34 | 18.62d |  | Burak Uçakan | 0.67h |
| 36 | 3.1.1.5 | **Otel** | 3.75d | 2007-05-30 09:30 | 2007-06-02 15:00 | 31 | 18.62d | 0d |  | 30h |
| 37 | 3.1.1.5.1 | **Otel Arama** | 1.5d | 2007-05-30 09:30 | 2007-05-31 14:00 |  | 18.62d | 0d |  | 12h |
| 38 | 3.1.1.5.1.1 | Otel Arama Formu | 2h | 2007-05-30 09:30 | 2007-05-30 11:30 |  | 18.62d | 0d | Burak Uçakan | 2h |
| 39 | 3.1.1.5.1.2 | Otel Arama Sonuçları | 4h | 2007-05-30 11:30 | 2007-05-30 16:30 | 38 | 18.62d | 0d | Burak Uçakan | 4h |
| 40 | 3.1.1.5.1.3 | Oda Listesi | 1h | 2007-05-30 16:30 | 2007-05-30 17:30 | 39 | 18.62d | 0d | Burak Uçakan | 1h |
| 41 | 3.1.1.5.1.4 | Sayfalama | 1h | 2007-05-30 17:30 | 2007-05-31 09:00 | 40 | 18.62d | 0d | Burak Uçakan | 1h |
| 42 | 3.1.1.5.1.5 | Oda detay sayfası (popup) | 4h | 2007-05-31 09:00 | 2007-05-31 14:00 | 41 | 18.62d |  | Burak Uçakan | 4h |
| 43 | 3.1.1.5.2 | **Otel Detayı** | 0.5d | 2007-05-31 14:00 | 2007-05-31 18:00 | 37 | 18.62d | 0d |  | 4h |
| 44 | 3.1.1.5.2.1 | Otel detay sayfası | 2h | 2007-05-31 14:00 | 2007-05-31 16:00 |  | 18.62d | 0d | Burak Uçakan | 2h |
| 45 | 3.1.1.5.2.2 | Otele yakın yerlerin listesi | 1h | 2007-05-31 16:00 | 2007-05-31 17:00 | 44 | 18.62d | 0d | Burak Uçakan | 1h |
| 46 | 3.1.1.5.2.3 | Otele ait odaların listesi | 1h | 2007-05-31 17:00 | 2007-05-31 18:00 | 45 | 18.62d |  | Burak Uçakan | 1h |
| 47 | 3.1.1.5.3 | **Otel Rezervasyon** | 1.5d | 2007-06-01 08:30 | 2007-06-02 12:00 | 43 | 18.62d | 0d |  | 12h |
| 48 | 3.1.1.5.3.1 | Rezervasyon Sayfası | 3h | 2007-06-01 08:30 | 2007-06-01 11:30 |  | 18.62d | 0d | Burak Uçakan | 3h |
| 49 | 3.1.1.5.3.2 | Müşteri Bilgileri Girişi (yeni, kayıt ve arama formu) | 3h | 2007-06-01 11:30 | 2007-06-01 15:30 | 48 | 18.62d | 0d | Burak Uçakan | 3h |
| 50 | 3.1.1.5.3.3 | Hızlı Rezervasyon | 1h | 2007-06-01 15:30 | 2007-06-01 16:30 | 49 | 18.62d | 0d | Burak Uçakan | 1h |
| 51 | 3.1.1.5.3.4 | Tur tavsiye listesi | 2h | 2007-06-01 16:30 | 2007-06-02 09:00 | 50 | 18.62d | 0d | Burak Uçakan | 2h |
| 52 | 3.1.1.5.3.5 | Transfer tavsiye listesi | 1h | 2007-06-02 09:00 | 2007-06-02 10:00 | 51 | 18.62d | 0d | Burak Uçakan | 1h |
| 53 | 3.1.1.5.3.6 | Rezervasyon Sonuç | 2h | 2007-06-02 10:00 | 2007-06-02 12:00 | 52 | 18.62d |  | Burak Uçakan | 2h |
| 54 | 3.1.1.5.4 | **Otel Transfer Bilgileri** | 0.25d | 2007-06-02 13:00 | 2007-06-02 15:00 | 47 | 18.62d |  |  | 2h |
| 55 | 3.1.1.5.4.1 | Otel Transfer Detay Formu | 2h | 2007-06-02 13:00 | 2007-06-02 15:00 |  | 18.62d |  | Burak Uçakan | 2h |

| ID | WBS | Task | Duration | Start | Finish | Predecessors | Total slack | Free slack | Resources | Work |
| --- | --- | --- | --- | --- | --- | --- | --- | --- | --- | --- |
| 56 | 3.1.1.6 | **Tur** | 2.62d | 2007-06-02 15:00 | 2007-06-06 09:30 | 36 | 18.62d | 0d |  | 21h |
| 57 | 3.1.1.6.1 | **Tur Arama** | 0.88d | 2007-06-02 15:00 | 2007-06-04 13:30 |  | 18.62d | 0d |  | 7h |
| 58 | 3.1.1.6.1.1 | Tur Arama Formu | 2h | 2007-06-02 15:00 | 2007-06-02 17:00 |  | 18.62d | 0d | Burak Uçakan | 2h |
| 59 | 3.1.1.6.1.2 | Tur Arama Sonuçları | 4h | 2007-06-02 17:00 | 2007-06-04 11:30 | 58 | 18.62d | 0d | Burak Uçakan | 4h |
| 60 | 3.1.1.6.1.3 | Sayfalama | 1h | 2007-06-04 11:30 | 2007-06-04 13:30 | 59 | 18.62d |  | Burak Uçakan | 1h |
| 61 | 3.1.1.6.2 | **Tur Detayı** | 0.5d | 2007-06-04 13:30 | 2007-06-04 17:30 | 57 | 18.62d | 0d |  | 4h |
| 62 | 3.1.1.6.2.1 | Tur detay sayfası | 4h | 2007-06-04 13:30 | 2007-06-04 17:30 |  | 18.62d |  | Burak Uçakan | 4h |
| 63 | 3.1.1.6.3 | **Tur Rezervasyon** | 1.25d | 2007-06-04 17:30 | 2007-06-06 09:30 | 61 | 18.62d |  |  | 10h |
| 64 | 3.1.1.6.3.1 | Rezervasyon Formu | 3h | 2007-06-04 17:30 | 2007-06-05 11:00 |  | 18.62d | 0d | Burak Uçakan | 3h |
| 65 | 3.1.1.6.3.2 | Müşteri Bilgileri Girişi (yeni, kayıt ve arama formu) | 1h | 2007-06-05 11:00 | 2007-06-05 12:00 | 64 | 18.62d | 0d | Burak Uçakan | 1h |
| 66 | 3.1.1.6.3.3 | Hızlı Rezervasyon | 1h | 2007-06-05 13:00 | 2007-06-05 14:00 | 65 | 18.62d | 0d | Burak Uçakan | 1h |
| 67 | 3.1.1.6.3.4 | Otel tavsiyeleri listesi | 2h | 2007-06-05 14:00 | 2007-06-05 16:00 | 66 | 18.62d | 0d | Burak Uçakan | 2h |
| 68 | 3.1.1.6.3.5 | Transfer tavsiyeleri listesi | 1h | 2007-06-05 16:00 | 2007-06-05 17:00 | 67 | 18.62d | 0d | Burak Uçakan | 1h |
| 69 | 3.1.1.6.3.6 | Rezervasyon Sonuç | 2h | 2007-06-05 17:00 | 2007-06-06 09:30 | 68 | 18.62d |  | Burak Uçakan | 2h |
| 70 | 3.1.1.7 | **Transfer** | 0.38d | 2007-06-06 09:30 | 2007-06-06 13:30 | 56 | 18.62d | 0d |  | 3h |
| 71 | 3.1.1.7.1 | Transfer Talep Formu | 2h | 2007-06-06 09:30 | 2007-06-06 11:30 |  | 18.62d | 0d | Burak Uçakan | 2h |
| 72 | 3.1.1.7.2 | Reservasyon Sonuç | 1h | 2007-06-06 11:30 | 2007-06-06 13:30 | 71 | 18.62d |  | Burak Uçakan | 1h |
| 73 | 3.1.1.8 | **Rezervasyon Sonuç Sayfası** | 0.75d | 2007-06-06 13:30 | 2007-06-07 10:00 | 70 | 18.62d | 0d |  | 6h |
| 74 | 3.1.1.8.1 | Rezervasyon sonuç sayfası (otel, tur ve/veya transfere ait özet bilgi) | 4h | 2007-06-06 13:30 | 2007-06-06 17:30 |  | 18.62d | 0d | Burak Uçakan | 4h |
| 75 | 3.1.1.8.2 | Paket olarak kaydetme | 2h | 2007-06-06 17:30 | 2007-06-07 10:00 | 74 | 18.62d |  | Burak Uçakan | 2h |
| 76 | 3.1.1.9 | Makbuzlar (Voucher) | 4h | 2007-06-07 10:00 | 2007-06-07 15:00 | 73 | 18.62d | 0d | Burak Uçakan | 4h |
| 77 | 3.1.1.10 | **Favori İşlemlerim** | 0.88d | 2007-06-07 15:00 | 2007-06-08 13:30 | 76 | 18.62d | 0d |  | 7h |
| 78 | 3.1.1.10.1 | Rezervasyonu kaydetmek ve tanıtıcı bilgiler | 1h | 2007-06-07 15:00 | 2007-06-07 16:00 |  | 18.62d | 0d | Burak Uçakan | 1h |
| 79 | 3.1.1.10.2 | Daha önce kaydedilenlerin listesi | 3h | 2007-06-07 16:00 | 2007-06-08 09:30 | 78 | 18.62d | 0d | Burak Uçakan | 3h |
| 80 | 3.1.1.10.3 | Daha önce kaydedilenlerin yönetimi (güncelleme/silme) | 3h | 2007-06-08 09:30 | 2007-06-08 13:30 | 79 | 18.62d |  | Burak Uçakan | 3h |

| ID | WBS | Task | Duration | Start | Finish | Predecessors | Total slack | Free slack | Resources | Work |
| --- | --- | --- | --- | --- | --- | --- | --- | --- | --- | --- |
| 81 | 3.1.1.11 | **Ödeme** | 1d | 2007-06-08 13:30 | 2007-06-09 12:00 | 77 | 18.62d | 0d |  | 8h |
| 82 | 3.1.1.11.1 | Ödeme bekleyen rezervasyonlar | 2h | 2007-06-08 13:30 | 2007-06-08 15:30 |  | 18.62d | 0d | Burak Uçakan | 2h |
| 83 | 3.1.1.11.2 | Ödeme bilgisi | 1h | 2007-06-08 15:30 | 2007-06-08 16:30 | 82 | 18.62d | 0d | Burak Uçakan | 1h |
| 84 | 3.1.1.11.3 | Pos işlemleri | 4h | 2007-06-08 16:30 | 2007-06-09 11:00 | 83 | 18.62d | 0d | Burak Uçakan | 4h |
| 85 | 3.1.1.11.4 | Ödeme sonuç sayfası | 1h | 2007-06-09 11:00 | 2007-06-09 12:00 | 84 | 18.62d |  | Burak Uçakan | 1h |
| 86 | 3.1.1.12 | **İşlemlerim** | 1.12d | 2007-06-09 13:00 | 2007-06-11 13:30 | 81 | 18.62d | 0d |  | 9h |
| 87 | 3.1.1.12.1 | Detaylı arama | 2h | 2007-06-09 13:00 | 2007-06-09 15:00 |  | 18.62d | 0d | Burak Uçakan | 2h |
| 88 | 3.1.1.12.2 | Ödeme bekleyenler | 2h | 2007-06-09 15:00 | 2007-06-09 17:00 | 87 | 18.62d | 0d | Burak Uçakan | 2h |
| 89 | 3.1.1.12.3 | Ödemesi yapılmış rezervasyonlar | 30min | 2007-06-09 17:00 | 2007-06-09 17:30 | 88 | 18.62d | 0d | Burak Uçakan | 0.5h |
| 90 | 3.1.1.12.4 | Tüm liste | 30min | 2007-06-09 17:30 | 2007-06-09 18:00 | 89 | 18.62d | 0d | Burak Uçakan | 0.5h |
| 91 | 3.1.1.12.5 | Rezervasyon/Ödeme iptal | 4h | 2007-06-11 08:30 | 2007-06-11 13:30 | 90 | 18.62d |  | Burak Uçakan | 4h |
| 92 | 3.1.1.13 | **Kullanıcı Yönetimi** | 0.63d | 2007-06-11 13:30 | 2007-06-12 09:02 | 86 | 18.62d | 0d |  | 5.03h |
| 93 | 3.1.1.13.1 | Detaylı arama | 2h | 2007-06-11 13:30 | 2007-06-11 15:30 |  | 18.62d | 0d | Burak Uçakan | 2h |
| 94 | 3.1.1.13.2 | Tüm kullanıcılar | 30min | 2007-06-11 15:30 | 2007-06-11 16:00 | 93 | 18.62d | 0d | Burak Uçakan | 0.5h |
| 95 | 3.1.1.13.3 | Yeni kullanıcı | 2h | 2007-06-11 16:00 | 2007-06-11 18:00 | 94 | 18.62d | 0d | Burak Uçakan | 2h |
| 96 | 3.1.1.13.4 | Kullanıcı güncelleme | 2min | 2007-06-12 08:30 | 2007-06-12 08:32 | 95 | 18.62d | 0d | Burak Uçakan | 0.03h |
| 97 | 3.1.1.13.5 | Kullanıcı sil | 30min | 2007-06-12 08:32 | 2007-06-12 09:02 | 96 | 18.62d |  | Burak Uçakan | 0.5h |
| 98 | 3.1.1.14 | **Arama** | 0.62d | 2007-06-12 09:02 | 2007-06-12 15:02 | 92 | 18.62d | 0d |  | 5h |
| 99 | 3.1.1.14.1 | Detaylı arama paneli | 1h | 2007-06-12 09:02 | 2007-06-12 10:02 |  | 18.62d | 0d | Burak Uçakan | 1h |
| 100 | 3.1.1.14.2 | Arama sonuç listesi | 2h | 2007-06-12 10:02 | 2007-06-12 13:02 | 99 | 18.62d | 0d | Burak Uçakan | 2h |
| 101 | 3.1.1.14.3 | Sonuç detayı | 2h | 2007-06-12 13:02 | 2007-06-12 15:02 | 100 | 18.62d |  | Burak Uçakan | 2h |
| 102 | 3.1.1.15 | **İletişim/Destek** | 0.44d | 2007-06-12 15:02 | 2007-06-13 09:02 | 98 | 18.62d | 0d |  | 3.5h |
| 103 | 3.1.1.15.1 | İletişim bilgileri | 30min | 2007-06-12 15:02 | 2007-06-12 15:32 |  | 18.62d | 0d | Burak Uçakan | 0.5h |
| 104 | 3.1.1.15.2 | Destek formu | 2h | 2007-06-12 15:32 | 2007-06-12 17:32 | 103 | 18.62d | 0d | Burak Uçakan | 2h |
| 105 | 3.1.1.15.3 | Form sonuç sayfası | 1h | 2007-06-12 17:32 | 2007-06-13 09:02 | 104 | 18.62d |  | Burak Uçakan | 1h |
| 106 | 3.1.1.16 | Güvenli çıkış | 1h | 2007-06-13 09:02 | 2007-06-13 10:02 | 102 | 18.62d |  | Burak Uçakan | 1h |

| ID | WBS | Task | Duration | Start | Finish | Predecessors | Total slack | Resources | Work |
| --- | --- | --- | --- | --- | --- | --- | --- | --- | --- |
| 107 | 3.1.2 | **B2C** | 1d | 2007-06-13 10:02 | 2007-06-14 09:32 | 13 | 21.12d |  |  |
| 108 | 3.1.2.1 | Login | 1d | 2007-06-13 10:02 | 2007-06-14 09:32 |  | 21.12d |  |  |
| 109 | 3.1.2.2 | Main Page | 1d | 2007-06-13 10:02 | 2007-06-14 09:32 |  | 21.12d |  |  |
| 110 | 3.1.3 | **ADMIN** | 28.81d | 2007-05-28 16:30 | 2007-06-28 17:30 | 471 | 0d |  | 227.5h |
| 111 | 3.1.3.1 | **Kullanıcı Yönetimi** | 4.75d | 2007-05-28 16:30 | 2007-06-02 11:00 |  | 0d |  | 38h |
| 112 | 3.1.3.1.1 | **Kullanıcılarla ilgili temel nesneler** | 0.5d | 2007-05-28 16:30 | 2007-05-29 11:00 |  | 0d |  | 4h |
| 113 | 3.1.3.1.1.1 | İşlem nesnesi | 40min | 2007-05-28 16:30 | 2007-05-28 17:10 |  | 0d | Serkan Yılmaz | 0.67h |
| 114 | 3.1.3.1.1.2 | İzin nesnesi | 40min | 2007-05-28 17:10 | 2007-05-28 17:50 | 113 | 0d | Serkan Yılmaz | 0.67h |
| 115 | 3.1.3.1.1.3 | Rol | 40min | 2007-05-28 17:50 | 2007-05-29 09:00 | 114 | 0d | Serkan Yılmaz | 0.67h |
| 116 | 3.1.3.1.1.4 | Kullanıcı nesnesi | 2h | 2007-05-29 09:00 | 2007-05-29 11:00 | 115 | 0d | Serkan Yılmaz | 2h |
| 117 | 3.1.3.1.2 | **İşlemler** | 0.73d | 2007-05-29 11:00 | 2007-05-29 17:50 | 112 | 0d |  | 5.83h |
| 118 | 3.1.3.1.2.1 | **İşlemleri listele** | 0.21d | 2007-05-29 11:00 | 2007-05-29 13:40 |  | 0d |  | 1.67h |
| 119 | 3.1.3.1.2.1.1 | İşlemler sayfası (html) | 1h | 2007-05-29 11:00 | 2007-05-29 12:00 |  | 0d | Serkan Yılmaz | 1h |
| 120 | 3.1.3.1.2.1.2 | İşlemler sayfası (kodlama) | 30min | 2007-05-29 13:00 | 2007-05-29 13:30 | 119 | 0d | Serkan Yılmaz | 0.5h |
| 121 | 3.1.3.1.2.1.3 | Yeni işlem, değiştir, sil bağlantıları | 10min | 2007-05-29 13:30 | 2007-05-29 13:40 | 120 | 0d | Serkan Yılmaz | 0.17h |
| 122 | 3.1.3.1.2.2 | **Yeni işlem ekleme** | 0.25d | 2007-05-29 13:40 | 2007-05-29 15:40 | 118 | 0d |  | 2h |
| 123 | 3.1.3.1.2.2.1 | İşlem ekleme formu (html) | 40min | 2007-05-29 13:40 | 2007-05-29 14:20 |  | 0d | Serkan Yılmaz | 0.67h |
| 124 | 3.1.3.1.2.2.2 | İşlem ekleme form validasyonu (client side .net valitators) | 20min | 2007-05-29 14:20 | 2007-05-29 14:40 | 123 | 0d | Serkan Yılmaz | 0.33h |
| 125 | 3.1.3.1.2.2.3 | Yeni işlem veritabanı kayıt | 20min | 2007-05-29 14:40 | 2007-05-29 15:00 | 124 | 0d | Serkan Yılmaz | 0.33h |
| 126 | 3.1.3.1.2.2.4 | Yeni işlem kayıt öncesi validasyon kodu | 20min | 2007-05-29 15:00 | 2007-05-29 15:20 | 125 | 0d | Serkan Yılmaz | 0.33h |
| 127 | 3.1.3.1.2.2.5 | Yeni işlem başarı ve hata mesajları | 20min | 2007-05-29 15:20 | 2007-05-29 15:40 | 126 | 0d | Serkan Yılmaz | 0.33h |
| 128 | 3.1.3.1.2.3 | **İşlem silme** | 0.1d | 2007-05-29 15:40 | 2007-05-29 16:30 | 122 | 0d |  | 0.83h |
| 129 | 3.1.3.1.2.3.1 | İşlem kullanılıyor mu kontrol kodu | 10min | 2007-05-29 15:40 | 2007-05-29 15:50 |  | 0d | Serkan Yılmaz | 0.17h |
| 130 | 3.1.3.1.2.3.2 | İşlem kullanılmıyorsa silinmesi kodu | 20min | 2007-05-29 15:50 | 2007-05-29 16:10 | 129 | 0d | Serkan Yılmaz | 0.33h |
| 131 | 3.1.3.1.2.3.3 | İşlem silme başarı ve hata mesajları | 20min | 2007-05-29 16:10 | 2007-05-29 16:30 | 130 | 0d | Serkan Yılmaz | 0.33h |

| ID | WBS | Task | Duration | Start | Finish | Predecessors | Total slack | Resources | Work |
| --- | --- | --- | --- | --- | --- | --- | --- | --- | --- |
| 132 | 3.1.3.1.2.4 | **İşlemde değişiklik yapma** | 0.17d | 2007-05-29 16:30 | 2007-05-29 17:50 | 128 | 0d |  | 1.33h |
| 133 | 3.1.3.1.2.4.1 | İşlem ekleme formunda değişiklikler yap | 30min | 2007-05-29 16:30 | 2007-05-29 17:00 |  | 0d | Serkan Yılmaz | 0.5h |
| 134 | 3.1.3.1.2.4.2 | İşlem ekleme formu açıldığında veriler yüklensin | 10min | 2007-05-29 17:00 | 2007-05-29 17:10 | 133 | 0d | Serkan Yılmaz | 0.17h |
| 135 | 3.1.3.1.2.4.3 | İşlem güncelleme kodu | 20min | 2007-05-29 17:10 | 2007-05-29 17:30 | 134 | 0d | Serkan Yılmaz | 0.33h |
| 136 | 3.1.3.1.2.4.4 | İşlemde değişiklik başarı ve hata mesajları | 20min | 2007-05-29 17:30 | 2007-05-29 17:50 | 135 | 0d | Serkan Yılmaz | 0.33h |
| 137 | 3.1.3.1.3 | **İzinler** | 0.81d | 2007-05-29 17:50 | 2007-05-30 15:50 | 117 | 0d |  | 6.5h |
| 138 | 3.1.3.1.3.1 | **İzinleri listele** | 0.21d | 2007-05-29 17:50 | 2007-05-30 10:00 |  | 0d |  | 1.67h |
| 139 | 3.1.3.1.3.1.1 | İzinler sayfası (html) | 1h | 2007-05-29 17:50 | 2007-05-30 09:20 |  | 0d | Serkan Yılmaz | 1h |
| 140 | 3.1.3.1.3.1.2 | İzinler sayfası (kodlama) | 30min | 2007-05-30 09:20 | 2007-05-30 09:50 | 139 | 0d | Serkan Yılmaz | 0.5h |
| 141 | 3.1.3.1.3.1.3 | Yeni izin, değiştir, sil bağlantıları | 10min | 2007-05-30 09:50 | 2007-05-30 10:00 | 140 | 0d | Serkan Yılmaz | 0.17h |
| 142 | 3.1.3.1.3.2 | **Yeni izin ekleme** | 0.33d | 2007-05-30 10:00 | 2007-05-30 13:40 | 138 | 0d |  | 2.67h |
| 143 | 3.1.3.1.3.2.1 | İzin ekleme formu | 40min | 2007-05-30 10:00 | 2007-05-30 10:40 |  | 0d | Serkan Yılmaz | 0.67h |
| 144 | 3.1.3.1.3.2.2 | İzin ekleme form validasyonu (client side .net valitators) | 20min | 2007-05-30 10:40 | 2007-05-30 11:00 | 143 | 0d | Serkan Yılmaz | 0.33h |
| 145 | 3.1.3.1.3.2.3 | Yeni izin veritabanı kayıt | 20min | 2007-05-30 11:00 | 2007-05-30 11:20 | 144 | 0d | Serkan Yılmaz | 0.33h |
| 146 | 3.1.3.1.3.2.4 | Seçili işlemleri eklenen izne bağla | 40min | 2007-05-30 11:20 | 2007-05-30 12:00 | 145 | 0d | Serkan Yılmaz | 0.67h |
| 147 | 3.1.3.1.3.2.5 | Yeni izin kayıt öncesi validasyon kodu | 20min | 2007-05-30 13:00 | 2007-05-30 13:20 | 146 | 0d | Serkan Yılmaz | 0.33h |
| 148 | 3.1.3.1.3.2.6 | Yeni izin başarı ve hata mesajları | 20min | 2007-05-30 13:20 | 2007-05-30 13:40 | 147 | 0d | Serkan Yılmaz | 0.33h |
| 149 | 3.1.3.1.3.3 | **İzin silme** | 0.1d | 2007-05-30 13:40 | 2007-05-30 14:30 | 142 | 0d |  | 0.83h |
| 150 | 3.1.3.1.3.3.1 | İzin kullanılıyor mu kontrol kodu | 10min | 2007-05-30 13:40 | 2007-05-30 13:50 |  | 0d | Serkan Yılmaz | 0.17h |
| 151 | 3.1.3.1.3.3.2 | İzin kullanılmıyorsa silinmesi kodu | 20min | 2007-05-30 13:50 | 2007-05-30 14:10 | 150 | 0d | Serkan Yılmaz | 0.33h |
| 152 | 3.1.3.1.3.3.3 | İzin silindi başarı ve hata mesajları | 20min | 2007-05-30 14:10 | 2007-05-30 14:30 | 151 | 0d | Serkan Yılmaz | 0.33h |
| 153 | 3.1.3.1.3.4 | **İzinde değişiklik yapma** | 0.17d | 2007-05-30 14:30 | 2007-05-30 15:50 | 149 | 0d |  | 1.33h |
| 154 | 3.1.3.1.3.4.1 | İzin ekleme formunda değişiklikler yap | 30min | 2007-05-30 14:30 | 2007-05-30 15:00 |  | 0d | Serkan Yılmaz | 0.5h |
| 155 | 3.1.3.1.3.4.2 | İzin ekleme formu açıldığında veriler yüklensin | 10min | 2007-05-30 15:00 | 2007-05-30 15:10 | 154 | 0d | Serkan Yılmaz | 0.17h |
| 156 | 3.1.3.1.3.4.3 | İzin güncelleme kodu | 20min | 2007-05-30 15:10 | 2007-05-30 15:30 | 155 | 0d | Serkan Yılmaz | 0.33h |
| 157 | 3.1.3.1.3.4.4 | İzinde değişiklik başarı ve hata mesajları | 20min | 2007-05-30 15:30 | 2007-05-30 15:50 | 156 | 0d | Serkan Yılmaz | 0.33h |

| ID | WBS | Task | Duration | Start | Finish | Predecessors | Total slack | Resources | Work |
| --- | --- | --- | --- | --- | --- | --- | --- | --- | --- |
| 158 | 3.1.3.1.4 | **Roller** | 0.81d | 2007-05-30 15:50 | 2007-05-31 13:50 | 137 | 0d |  | 6.5h |
| 159 | 3.1.3.1.4.1 | **Rolleri listeleme** | 0.21d | 2007-05-30 15:50 | 2007-05-30 17:30 |  | 0d |  | 1.67h |
| 160 | 3.1.3.1.4.1.1 | Roller sayfası (html) | 1h | 2007-05-30 15:50 | 2007-05-30 16:50 |  | 0d | Serkan Yılmaz | 1h |
| 161 | 3.1.3.1.4.1.2 | Roller sayfası (kodlama) | 30min | 2007-05-30 16:50 | 2007-05-30 17:20 | 160 | 0d | Serkan Yılmaz | 0.5h |
| 162 | 3.1.3.1.4.1.3 | Yeni rol, değiştir, sil bağlantıları | 10min | 2007-05-30 17:20 | 2007-05-30 17:30 | 161 | 0d | Serkan Yılmaz | 0.17h |
| 163 | 3.1.3.1.4.2 | **Yeni rol ekleme** | 0.33d | 2007-05-30 17:30 | 2007-05-31 10:40 | 162 | 0d |  | 2.67h |
| 164 | 3.1.3.1.4.2.1 | Rol ekleme formu | 40min | 2007-05-30 17:30 | 2007-05-31 08:40 |  | 0d | Serkan Yılmaz | 0.67h |
| 165 | 3.1.3.1.4.2.2 | Rol ekleme formu validasyonu (client side .net valitators) | 20min | 2007-05-31 08:40 | 2007-05-31 09:00 | 164 | 0d | Serkan Yılmaz | 0.33h |
| 166 | 3.1.3.1.4.2.3 | Yeni rol veritabanı kayıt | 20min | 2007-05-31 09:00 | 2007-05-31 09:20 | 165 | 0d | Serkan Yılmaz | 0.33h |
| 167 | 3.1.3.1.4.2.4 | Seçili izinleri eklenen role bağla | 40min | 2007-05-31 09:20 | 2007-05-31 10:00 | 166 | 0d | Serkan Yılmaz | 0.67h |
| 168 | 3.1.3.1.4.2.5 | Yeni rol kayıt öncesi validasyon kodu | 20min | 2007-05-31 10:00 | 2007-05-31 10:20 | 167 | 0d | Serkan Yılmaz | 0.33h |
| 169 | 3.1.3.1.4.2.6 | Yeni rol başarı ve hata mesajları | 20min | 2007-05-31 10:20 | 2007-05-31 10:40 | 168 | 0d | Serkan Yılmaz | 0.33h |
| 170 | 3.1.3.1.4.3 | **Rol silme** | 0.1d | 2007-05-31 10:40 | 2007-05-31 11:30 | 169 | 0d |  | 0.83h |
| 171 | 3.1.3.1.4.3.1 | Rol kullanılıyor mu kontrol kodu | 10min | 2007-05-31 10:40 | 2007-05-31 10:50 |  | 0d | Serkan Yılmaz | 0.17h |
| 172 | 3.1.3.1.4.3.2 | Rol kullanılmıyorsa silinmesi kodu | 20min | 2007-05-31 10:50 | 2007-05-31 11:10 | 171 | 0d | Serkan Yılmaz | 0.33h |
| 173 | 3.1.3.1.4.3.3 | Rol silindi başarı ve hata mesajları | 20min | 2007-05-31 11:10 | 2007-05-31 11:30 | 172 | 0d | Serkan Yılmaz | 0.33h |
| 174 | 3.1.3.1.4.4 | **Rolde değişiklik yapma** | 0.17d | 2007-05-31 11:30 | 2007-05-31 13:50 | 173 | 0d |  | 1.33h |
| 175 | 3.1.3.1.4.4.1 | Rol ekleme formunda değişiklikler yap | 30min | 2007-05-31 11:30 | 2007-05-31 12:00 |  | 0d | Serkan Yılmaz | 0.5h |
| 176 | 3.1.3.1.4.4.2 | Rol ekleme formu açıldığında veriler yüklensin | 10min | 2007-05-31 13:00 | 2007-05-31 13:10 | 175 | 0d | Serkan Yılmaz | 0.17h |
| 177 | 3.1.3.1.4.4.3 | Rol güncelleme kodu | 20min | 2007-05-31 13:10 | 2007-05-31 13:30 | 176 | 0d | Serkan Yılmaz | 0.33h |
| 178 | 3.1.3.1.4.4.4 | Rolde değişiklik başarı ve hata mesajları | 20min | 2007-05-31 13:30 | 2007-05-31 13:50 | 177 | 0d | Serkan Yılmaz | 0.33h |
| 179 | 3.1.3.1.5 | **Kullanıcılar** | 1.9d | 2007-05-31 13:50 | 2007-06-02 11:00 | 158 | 0d |  | 15.17h |
| 180 | 3.1.3.1.5.1 | **Kullanıcıları listeleme** | 0.27d | 2007-05-31 13:50 | 2007-05-31 16:00 |  | 0d |  | 2.17h |
| 181 | 3.1.3.1.5.1.1 | Kullanıcılar sayfası (html) | 1.5h | 2007-05-31 13:50 | 2007-05-31 15:20 |  | 0d | Serkan Yılmaz | 1.5h |
| 182 | 3.1.3.1.5.1.2 | Kullanıcılar sayfası (kodlama) | 30min | 2007-05-31 15:20 | 2007-05-31 15:50 | 181 | 0d | Serkan Yılmaz | 0.5h |
| 183 | 3.1.3.1.5.1.3 | Yeni kullanıcı, değiştir, sil bağlantıları | 10min | 2007-05-31 15:50 | 2007-05-31 16:00 | 182 | 0d | Serkan Yılmaz | 0.17h |

| ID | WBS | Task | Duration | Start | Finish | Predecessors | Total slack | Resources | Work |
| --- | --- | --- | --- | --- | --- | --- | --- | --- | --- |
| 184 | 3.1.3.1.5.2 | **Yeni kullanıcı ekleme** | 0.5d | 2007-05-31 16:00 | 2007-06-01 10:30 | 180 | 0d |  | 4h |
| 185 | 3.1.3.1.5.2.1 | Kullanıcı ekleme formu | 1h | 2007-05-31 16:00 | 2007-05-31 17:00 |  | 0d | Serkan Yılmaz | 1h |
| 186 | 3.1.3.1.5.2.2 | Kullanıcı ekleme form validasyonu (client side .net valitators) | 30min | 2007-05-31 17:00 | 2007-05-31 17:30 | 185 | 0d | Serkan Yılmaz | 0.5h |
| 187 | 3.1.3.1.5.2.3 | Yeni kullanıcı veritabanı kayıt | 30min | 2007-05-31 17:30 | 2007-05-31 18:00 | 186 | 0d | Serkan Yılmaz | 0.5h |
| 188 | 3.1.3.1.5.2.4 | Seçili rol veya rolleri kullanıcıya bağla | 1h | 2007-06-01 08:30 | 2007-06-01 09:30 | 187 | 0d | Serkan Yılmaz | 1h |
| 189 | 3.1.3.1.5.2.5 | Yeni kullanıcı kayıt öncesi validasyon kodu | 20min | 2007-06-01 09:30 | 2007-06-01 09:50 | 188 | 0d | Serkan Yılmaz | 0.33h |
| 190 | 3.1.3.1.5.2.6 | Yeni kullanıcı başarı be hata mesajı | 20min | 2007-06-01 09:50 | 2007-06-01 10:10 | 189 | 0d | Serkan Yılmaz | 0.33h |
| 191 | 3.1.3.1.5.2.7 | Yeni kullanıcı açıldı maili (yöneticiye) | 20min | 2007-06-01 10:10 | 2007-06-01 10:30 | 190 | 0d | Serkan Yılmaz | 0.33h |
| 192 | 3.1.3.1.5.3 | **Kullanıcı silme** | 0.1d | 2007-06-01 10:30 | 2007-06-01 11:20 | 184 | 0d |  | 0.83h |
| 193 | 3.1.3.1.5.3.1 | Kullanıcıyı inactive duruma getir | 10min | 2007-06-01 10:30 | 2007-06-01 10:40 |  | 0d | Serkan Yılmaz | 0.17h |
| 194 | 3.1.3.1.5.3.2 | Kullanıcı silindi maili | 20min | 2007-06-01 10:40 | 2007-06-01 11:00 | 193 | 0d | Serkan Yılmaz | 0.33h |
| 195 | 3.1.3.1.5.3.3 | Kullanıcı silindi başarı ve hata mesajı | 20min | 2007-06-01 11:00 | 2007-06-01 11:20 | 194 | 0d | Serkan Yılmaz | 0.33h |
| 196 | 3.1.3.1.5.4 | **Kullanıcı işlemleri** | 1.02d | 2007-06-01 11:20 | 2007-06-02 11:00 | 192 | 0d |  | 8.17h |
| 197 | 3.1.3.1.5.4.1 | Kullanıcı detayları sayfası | 2h | 2007-06-01 11:20 | 2007-06-01 14:20 |  | 0d | Serkan Yılmaz | 2h |
| 198 | 3.1.3.1.5.4.2 | Kullanıcı değiştirilebilsin mi ayarı | 30min | 2007-06-01 14:20 | 2007-06-01 14:50 | 197 | 0d | Serkan Yılmaz | 0.5h |
| 199 | 3.1.3.1.5.4.3 | Kullanıcı ekleme formunda değişiklikler yap | 40min | 2007-06-01 14:50 | 2007-06-01 15:30 | 198 | 0d | Serkan Yılmaz | 0.67h |
| 200 | 3.1.3.1.5.4.4 | Kullanıcı ekleme formu açıldığında veriler yüklensin | 20min | 2007-06-01 15:30 | 2007-06-01 15:50 | 199 | 0d | Serkan Yılmaz | 0.33h |
| 201 | 3.1.3.1.5.4.5 | Kullanıcı güncelleme | 40min | 2007-06-01 15:50 | 2007-06-01 16:30 | 200 | 0d | Serkan Yılmaz | 0.67h |
| 202 | 3.1.3.1.5.4.6 | Kullanıcıda değişiklik başarı ve hata mesajları | 20min | 2007-06-01 16:30 | 2007-06-01 16:50 | 201 | 0d | Serkan Yılmaz | 0.33h |
| 203 | 3.1.3.1.5.4.7 | Profilim sayfası | 2h | 2007-06-01 16:50 | 2007-06-02 09:20 | 202 | 0d | Serkan Yılmaz | 2h |
| 204 | 3.1.3.1.5.4.8 | Kendi bilgilerini düzenleme formu (html) | 1h | 2007-06-02 09:20 | 2007-06-02 10:20 | 203 | 0d | Serkan Yılmaz | 1h |
| 205 | 3.1.3.1.5.4.9 | Kendi bilgilerini güncelleme kodu | 40min | 2007-06-02 10:20 | 2007-06-02 11:00 | 204 | 0d | Serkan Yılmaz | 0.67h |
| 206 | 3.1.3.2 | **Kullanıcı Girişi** | 0.58d | 2007-06-02 11:00 | 2007-06-02 16:40 | 111 | 0d |  | 4.67h |
| 207 | 3.1.3.2.1 | Login formu (html) | 2h | 2007-06-02 11:00 | 2007-06-02 14:00 |  | 0d | Serkan Yılmaz | 2h |
| 208 | 3.1.3.2.2 | Login form validasyonu (client side) | 40min | 2007-06-02 14:00 | 2007-06-02 14:40 | 207 | 0d | Serkan Yılmaz | 0.67h |
| 209 | 3.1.3.2.3 | Login kullanıcı kontrolü ve verilerinin sessiona doldurulması | 2h | 2007-06-02 14:40 | 2007-06-02 16:40 | 208 | 0d | Serkan Yılmaz | 2h |

| ID | WBS | Task | Duration | Start | Finish | Predecessors | Total slack | Resources | Work |
| --- | --- | --- | --- | --- | --- | --- | --- | --- | --- |
| 210 | 3.1.3.3 | **İçerik Yönetimi** | 3.44d | 2007-06-02 16:40 | 2007-06-07 09:10 | 206 | 0d |  | 27.5h |
| 211 | 3.1.3.3.1 | **İçerik temel nesneleri** | 0.38d | 2007-06-02 16:40 | 2007-06-04 10:10 |  | 0d |  | 3h |
| 212 | 3.1.3.3.1.1 | Ülke nesnesi | 40min | 2007-06-02 16:40 | 2007-06-02 17:20 |  | 0d | Serkan Yılmaz | 0.67h |
| 213 | 3.1.3.3.1.2 | Şehir nesnesi | 40min | 2007-06-02 17:20 | 2007-06-02 18:00 | 212 | 0d | Serkan Yılmaz | 0.67h |
| 214 | 3.1.3.3.1.3 | Liman nesnesi | 40min | 2007-06-04 08:30 | 2007-06-04 09:10 | 213 | 0d | Serkan Yılmaz | 0.67h |
| 215 | 3.1.3.3.1.4 | Yakın yerler nesnesi | 1h | 2007-06-04 09:10 | 2007-06-04 10:10 | 214 | 0d | Serkan Yılmaz | 1h |
| 216 | 3.1.3.3.2 | **Ülkeler** | 0.75d | 2007-06-04 10:10 | 2007-06-04 17:10 | 211 | 0d |  | 6h |
| 217 | 3.1.3.3.2.1 | **Ülkeleri listele** | 0.21d | 2007-06-04 10:10 | 2007-06-04 11:50 |  | 0d |  | 1.67h |
| 218 | 3.1.3.3.2.1.1 | Ülkeler sayfası (html) | 1h | 2007-06-04 10:10 | 2007-06-04 11:10 |  | 0d | Serkan Yılmaz | 1h |
| 219 | 3.1.3.3.2.1.2 | Ülkeler sayfası (kodlama) | 30min | 2007-06-04 11:10 | 2007-06-04 11:40 | 218 | 0d | Serkan Yılmaz | 0.5h |
| 220 | 3.1.3.3.2.1.3 | Yeni ülke, değiştir, sil bağlantıları | 10min | 2007-06-04 11:40 | 2007-06-04 11:50 | 219 | 0d | Serkan Yılmaz | 0.17h |
| 221 | 3.1.3.3.2.2 | **Yeni ülke ekleme** | 0.25d | 2007-06-04 11:50 | 2007-06-04 14:50 | 217 | 0d |  | 2h |
| 222 | 3.1.3.3.2.2.1 | Ülke ekleme formu (html) | 40min | 2007-06-04 11:50 | 2007-06-04 13:30 |  | 0d | Serkan Yılmaz | 0.67h |
| 223 | 3.1.3.3.2.2.2 | Ülke ekleme formu validasyonu (client side .net valitators) | 20min | 2007-06-04 13:30 | 2007-06-04 13:50 | 222 | 0d | Serkan Yılmaz | 0.33h |
| 224 | 3.1.3.3.2.2.3 | Yeni ülke veritabanı kayıt | 20min | 2007-06-04 13:50 | 2007-06-04 14:10 | 223 | 0d | Serkan Yılmaz | 0.33h |
| 225 | 3.1.3.3.2.2.4 | Yeni ülke kayıt öncesi validasyon kodu | 20min | 2007-06-04 14:10 | 2007-06-04 14:30 | 224 | 0d | Serkan Yılmaz | 0.33h |
| 226 | 3.1.3.3.2.2.5 | Yeni ülke başarı ve hata mesajları | 20min | 2007-06-04 14:30 | 2007-06-04 14:50 | 225 | 0d | Serkan Yılmaz | 0.33h |
| 227 | 3.1.3.3.2.3 | **Ülke silme** | 0.1d | 2007-06-04 14:50 | 2007-06-04 15:40 | 221 | 0d |  | 0.83h |
| 228 | 3.1.3.3.2.3.1 | Ülke kullanılıyor mu kontrol kodu | 10min | 2007-06-04 14:50 | 2007-06-04 15:00 |  | 0d | Serkan Yılmaz | 0.17h |
| 229 | 3.1.3.3.2.3.2 | Ülke kullanılmıyorsa silinmesi kodu | 20min | 2007-06-04 15:00 | 2007-06-04 15:20 | 228 | 0d | Serkan Yılmaz | 0.33h |
| 230 | 3.1.3.3.2.3.3 | Ülke silme başarı ve hata mesajları | 20min | 2007-06-04 15:20 | 2007-06-04 15:40 | 229 | 0d | Serkan Yılmaz | 0.33h |
| 231 | 3.1.3.3.2.4 | **Ülkede değişiklik yapma** | 0.19d | 2007-06-04 15:40 | 2007-06-04 17:10 | 227 | 0d |  | 1.5h |
| 232 | 3.1.3.3.2.4.1 | Ülke ekleme formunda değişiklikler yap | 40min | 2007-06-04 15:40 | 2007-06-04 16:20 |  | 0d | Serkan Yılmaz | 0.67h |
| 233 | 3.1.3.3.2.4.2 | Ülke ekleme formu açıldığında veriler yüklensin | 10min | 2007-06-04 16:20 | 2007-06-04 16:30 | 232 | 0d | Serkan Yılmaz | 0.17h |
| 234 | 3.1.3.3.2.4.3 | Ülke güncelleme kodu | 20min | 2007-06-04 16:30 | 2007-06-04 16:50 | 233 | 0d | Serkan Yılmaz | 0.33h |
| 235 | 3.1.3.3.2.4.4 | Ülke değişiklik başarı ve hata mesajları | 20min | 2007-06-04 16:50 | 2007-06-04 17:10 | 234 | 0d | Serkan Yılmaz | 0.33h |

| ID | WBS | Task | Duration | Start | Finish | Predecessors | Total slack | Resources | Work |
| --- | --- | --- | --- | --- | --- | --- | --- | --- | --- |
| 236 | 3.1.3.3.3 | **Şehirler** | 0.75d | 2007-06-04 17:10 | 2007-06-05 14:40 | 216 | 0d |  | 6h |
| 237 | 3.1.3.3.3.1 | **Şehirleri listele** | 0.21d | 2007-06-04 17:10 | 2007-06-05 09:20 |  | 0d |  | 1.67h |
| 238 | 3.1.3.3.3.1.1 | Şehirler sayfası (html) | 1h | 2007-06-04 17:10 | 2007-06-05 08:40 |  | 0d | Serkan Yılmaz | 1h |
| 239 | 3.1.3.3.3.1.2 | Şehirler sayfası (kodlama) | 30min | 2007-06-05 08:40 | 2007-06-05 09:10 | 238 | 0d | Serkan Yılmaz | 0.5h |
| 240 | 3.1.3.3.3.1.3 | Yeni şehir, değiştir, sil bağlantıları | 10min | 2007-06-05 09:10 | 2007-06-05 09:20 | 239 | 0d | Serkan Yılmaz | 0.17h |
| 241 | 3.1.3.3.3.2 | **Yeni şehir ekleme** | 0.25d | 2007-06-05 09:20 | 2007-06-05 11:20 | 237 | 0d |  | 2h |
| 242 | 3.1.3.3.3.2.1 | Şehir ekleme formu (html) | 40min | 2007-06-05 09:20 | 2007-06-05 10:00 |  | 0d | Serkan Yılmaz | 0.67h |
| 243 | 3.1.3.3.3.2.2 | Şehir ekleme formu validasyonu (client side .net valitators) | 20min | 2007-06-05 10:00 | 2007-06-05 10:20 | 242 | 0d | Serkan Yılmaz | 0.33h |
| 244 | 3.1.3.3.3.2.3 | Yeni şehir veritabanı kayıt | 20min | 2007-06-05 10:20 | 2007-06-05 10:40 | 243 | 0d | Serkan Yılmaz | 0.33h |
| 245 | 3.1.3.3.3.2.4 | Yeni şehir kayıt öncesi validasyon kodu | 20min | 2007-06-05 10:40 | 2007-06-05 11:00 | 244 | 0d | Serkan Yılmaz | 0.33h |
| 246 | 3.1.3.3.3.2.5 | Yeni şehir başarı ve hata mesajları | 20min | 2007-06-05 11:00 | 2007-06-05 11:20 | 245 | 0d | Serkan Yılmaz | 0.33h |
| 247 | 3.1.3.3.3.3 | **Şehir silme** | 0.1d | 2007-06-05 11:20 | 2007-06-05 13:10 | 241 | 0d |  | 0.83h |
| 248 | 3.1.3.3.3.3.1 | Şehir kullanılıyor mu kontrol kodu | 10min | 2007-06-05 11:20 | 2007-06-05 11:30 |  | 0d | Serkan Yılmaz | 0.17h |
| 249 | 3.1.3.3.3.3.2 | Şehir kullanılmıyorsa silinmesi kodu | 20min | 2007-06-05 11:30 | 2007-06-05 11:50 | 248 | 0d | Serkan Yılmaz | 0.33h |
| 250 | 3.1.3.3.3.3.3 | Şehir silme başarı ve hata mesajları | 20min | 2007-06-05 11:50 | 2007-06-05 13:10 | 249 | 0d | Serkan Yılmaz | 0.33h |
| 251 | 3.1.3.3.3.4 | **Şehirde değişiklik yapma** | 0.19d | 2007-06-05 13:10 | 2007-06-05 14:40 | 247 | 0d |  | 1.5h |
| 252 | 3.1.3.3.3.4.1 | Şehir ekleme formunda değişiklikler yap | 40min | 2007-06-05 13:10 | 2007-06-05 13:50 |  | 0d | Serkan Yılmaz | 0.67h |
| 253 | 3.1.3.3.3.4.2 | Şehir ekleme formu açıldığında veriler yüklensin | 10min | 2007-06-05 13:50 | 2007-06-05 14:00 | 252 | 0d | Serkan Yılmaz | 0.17h |
| 254 | 3.1.3.3.3.4.3 | Şehir güncelleme kodu | 20min | 2007-06-05 14:00 | 2007-06-05 14:20 | 253 | 0d | Serkan Yılmaz | 0.33h |
| 255 | 3.1.3.3.3.4.4 | Şehir değişiklik başarı ve hata mesajları | 20min | 2007-06-05 14:20 | 2007-06-05 14:40 | 254 | 0d | Serkan Yılmaz | 0.33h |
| 256 | 3.1.3.3.4 | **Limanlar** | 0.75d | 2007-06-05 14:40 | 2007-06-06 11:10 | 236 | 0d |  | 6h |
| 257 | 3.1.3.3.4.1 | **Limanları listele** | 0.21d | 2007-06-05 14:40 | 2007-06-05 16:20 |  | 0d |  | 1.67h |
| 258 | 3.1.3.3.4.1.1 | Limanlar sayfası (html) | 1h | 2007-06-05 14:40 | 2007-06-05 15:40 |  | 0d | Serkan Yılmaz | 1h |
| 259 | 3.1.3.3.4.1.2 | Limanlar sayfası (kodlama) | 30min | 2007-06-05 15:40 | 2007-06-05 16:10 | 258 | 0d | Serkan Yılmaz | 0.5h |
| 260 | 3.1.3.3.4.1.3 | Yeni liman, değiştir, sil bağlantıları | 10min | 2007-06-05 16:10 | 2007-06-05 16:20 | 259 | 0d | Serkan Yılmaz | 0.17h |

| ID | WBS | Task | Duration | Start | Finish | Predecessors | Total slack | Resources | Work |
| --- | --- | --- | --- | --- | --- | --- | --- | --- | --- |
| 261 | 3.1.3.3.4.2 | **Yeni liman ekleme** | 0.25d | 2007-06-05 16:20 | 2007-06-06 08:50 | 257 | 0d |  | 2h |
| 262 | 3.1.3.3.4.2.1 | Liman ekleme formu (html) | 40min | 2007-06-05 16:20 | 2007-06-05 17:00 |  | 0d | Serkan Yılmaz | 0.67h |
| 263 | 3.1.3.3.4.2.2 | Liman ekleme formu validasyonu (client side .net valitators) | 20min | 2007-06-05 17:00 | 2007-06-05 17:20 | 262 | 0d | Serkan Yılmaz | 0.33h |
| 264 | 3.1.3.3.4.2.3 | Yeni liman veritabanı kayıt | 20min | 2007-06-05 17:20 | 2007-06-05 17:40 | 263 | 0d | Serkan Yılmaz | 0.33h |
| 265 | 3.1.3.3.4.2.4 | Yeni liman kayıt öncesi validasyon kodu | 20min | 2007-06-05 17:40 | 2007-06-05 18:00 | 264 | 0d | Serkan Yılmaz | 0.33h |
| 266 | 3.1.3.3.4.2.5 | Yeni liman başarı ve hata mesajları | 20min | 2007-06-06 08:30 | 2007-06-06 08:50 | 265 | 0d | Serkan Yılmaz | 0.33h |
| 267 | 3.1.3.3.4.3 | **Liman silme** | 0.1d | 2007-06-06 08:50 | 2007-06-06 09:40 | 261 | 0d |  | 0.83h |
| 268 | 3.1.3.3.4.3.1 | Liman kullanılıyor mu kontrol kodu | 10min | 2007-06-06 08:50 | 2007-06-06 09:00 |  | 0d | Serkan Yılmaz | 0.17h |
| 269 | 3.1.3.3.4.3.2 | Liman kullanılmıyorsa silinmesi kodu | 20min | 2007-06-06 09:00 | 2007-06-06 09:20 | 268 | 0d | Serkan Yılmaz | 0.33h |
| 270 | 3.1.3.3.4.3.3 | Liman silme başarı ve hata mesajları | 20min | 2007-06-06 09:20 | 2007-06-06 09:40 | 269 | 0d | Serkan Yılmaz | 0.33h |
| 271 | 3.1.3.3.4.4 | **Limanda değişiklik yapma** | 0.19d | 2007-06-06 09:40 | 2007-06-06 11:10 | 267 | 0d |  | 1.5h |
| 272 | 3.1.3.3.4.4.1 | Liman ekleme formunda değişiklikler yap | 40min | 2007-06-06 09:40 | 2007-06-06 10:20 |  | 0d | Serkan Yılmaz | 0.67h |
| 273 | 3.1.3.3.4.4.2 | Liman ekleme formu açıldığında veriler yüklensin | 10min | 2007-06-06 10:20 | 2007-06-06 10:30 | 272 | 0d | Serkan Yılmaz | 0.17h |
| 274 | 3.1.3.3.4.4.3 | Liman güncelleme kodu | 20min | 2007-06-06 10:30 | 2007-06-06 10:50 | 273 | 0d | Serkan Yılmaz | 0.33h |
| 275 | 3.1.3.3.4.4.4 | Liman değişiklik başarı ve hata mesajları | 20min | 2007-06-06 10:50 | 2007-06-06 11:10 | 274 | 0d | Serkan Yılmaz | 0.33h |
| 276 | 3.1.3.3.5 | **Yakın yerler** | 0.81d | 2007-06-06 11:10 | 2007-06-07 09:10 | 256 | 0d |  | 6.5h |
| 277 | 3.1.3.3.5.1 | **Yakın yerleri listele** | 0.27d | 2007-06-06 11:10 | 2007-06-06 14:20 |  | 0d |  | 2.17h |
| 278 | 3.1.3.3.5.1.1 | Yakın yerler sayfası (html) | 1.5h | 2007-06-06 11:10 | 2007-06-06 13:40 |  | 0d | Serkan Yılmaz | 1.5h |
| 279 | 3.1.3.3.5.1.2 | Yakın yerler sayfası (kodlama) | 30min | 2007-06-06 13:40 | 2007-06-06 14:10 | 278 | 0d | Serkan Yılmaz | 0.5h |
| 280 | 3.1.3.3.5.1.3 | Yeni yakın yer, değiştir, sil bağlantıları | 10min | 2007-06-06 14:10 | 2007-06-06 14:20 | 279 | 0d | Serkan Yılmaz | 0.17h |
| 281 | 3.1.3.3.5.2 | **Yeni yakın yer ekleme** | 0.25d | 2007-06-06 14:20 | 2007-06-06 16:20 | 277 | 0d |  | 2h |
| 282 | 3.1.3.3.5.2.1 | Yakın yer ekleme formu (html) | 40min | 2007-06-06 14:20 | 2007-06-06 15:00 |  | 0d | Serkan Yılmaz | 0.67h |
| 283 | 3.1.3.3.5.2.2 | Yakın yer ekleme formu validasyonu (client side .net valitators) | 20min | 2007-06-06 15:00 | 2007-06-06 15:20 | 282 | 0d | Serkan Yılmaz | 0.33h |
| 284 | 3.1.3.3.5.2.3 | Yeni yakın yer veritabanı kayıt | 20min | 2007-06-06 15:20 | 2007-06-06 15:40 | 283 | 0d | Serkan Yılmaz | 0.33h |
| 285 | 3.1.3.3.5.2.4 | Yeni yakın yer kayıt öncesi validasyon kodu | 20min | 2007-06-06 15:40 | 2007-06-06 16:00 | 284 | 0d | Serkan Yılmaz | 0.33h |
| 286 | 3.1.3.3.5.2.5 | Yeni yakın yer başarı ve hata mesajları | 20min | 2007-06-06 16:00 | 2007-06-06 16:20 | 285 | 0d | Serkan Yılmaz | 0.33h |

| ID | WBS | Task | Duration | Start | Finish | Predecessors | Total slack | Resources | Work |
| --- | --- | --- | --- | --- | --- | --- | --- | --- | --- |
| 287 | 3.1.3.3.5.3 | **Yakın yeri silme** | 0.1d | 2007-06-06 16:20 | 2007-06-06 17:10 | 281 | 0d |  | 0.83h |
| 288 | 3.1.3.3.5.3.1 | Yakın yer kullanılıyor mu kontrol kodu | 10min | 2007-06-06 16:20 | 2007-06-06 16:30 |  | 0d | Serkan Yılmaz | 0.17h |
| 289 | 3.1.3.3.5.3.2 | Yakın yer kullanılmıyorsa silinmesi kodu | 20min | 2007-06-06 16:30 | 2007-06-06 16:50 | 288 | 0d | Serkan Yılmaz | 0.33h |
| 290 | 3.1.3.3.5.3.3 | Yakın yer silme başarı ve hata mesajları | 20min | 2007-06-06 16:50 | 2007-06-06 17:10 | 289 | 0d | Serkan Yılmaz | 0.33h |
| 291 | 3.1.3.3.5.4 | **Yakın yerde değişiklik yapma** | 0.19d | 2007-06-06 17:10 | 2007-06-07 09:10 | 287 | 0d |  | 1.5h |
| 292 | 3.1.3.3.5.4.1 | Yakın yer ekleme formunda değişiklikler yap | 40min | 2007-06-06 17:10 | 2007-06-06 17:50 |  | 0d | Serkan Yılmaz | 0.67h |
| 293 | 3.1.3.3.5.4.2 | Yakın yer ekleme formu açıldığında veriler yüklensin | 10min | 2007-06-06 17:50 | 2007-06-06 18:00 | 292 | 0d | Serkan Yılmaz | 0.17h |
| 294 | 3.1.3.3.5.4.3 | Yakın yer güncelleme kodu | 20min | 2007-06-07 08:30 | 2007-06-07 08:50 | 293 | 0d | Serkan Yılmaz | 0.33h |
| 295 | 3.1.3.3.5.4.4 | Yakın yer değişiklik başarı ve hata mesajları | 20min | 2007-06-07 08:50 | 2007-06-07 09:10 | 294 | 0d | Serkan Yılmaz | 0.33h |
| 296 | 3.1.3.4 | **Firma Yönetimi** | 2.27d | 2007-06-07 09:10 | 2007-06-09 10:20 | 210 | 0d |  | 18.17h |
| 297 | 3.1.3.4.1 | **Firma temel nesneleri** | 0.38d | 2007-06-07 09:10 | 2007-06-07 13:10 |  | 0d |  | 3h |
| 298 | 3.1.3.4.1.1 | Müşteri nesnesi | 3h | 2007-06-07 09:10 | 2007-06-07 13:10 |  | 0d | Serkan Yılmaz | 3h |
| 299 | 3.1.3.4.2 | **Firmaları listele** | 0.35d | 2007-06-07 13:10 | 2007-06-07 16:00 | 297 | 0d |  | 2.83h |
| 300 | 3.1.3.4.2.1 | Firamalar sayfası (html) | 2h | 2007-06-07 13:10 | 2007-06-07 15:10 |  | 0d | Serkan Yılmaz | 2h |
| 301 | 3.1.3.4.2.2 | Firmalar sayfası (kodlama) | 40min | 2007-06-07 15:10 | 2007-06-07 15:50 | 300 | 0d | Serkan Yılmaz | 0.67h |
| 302 | 3.1.3.4.2.3 | Yeni firma, değiştir, sil bağlantıları | 10min | 2007-06-07 15:50 | 2007-06-07 16:00 | 301 | 0d | Serkan Yılmaz | 0.17h |
| 303 | 3.1.3.4.3 | **Yeni firma ekleme** | 0.4d | 2007-06-07 16:00 | 2007-06-08 09:40 | 299 | 0d |  | 3.17h |
| 304 | 3.1.3.4.3.1 | Firma ekleme formu (html) | 1h | 2007-06-07 16:00 | 2007-06-07 17:00 |  | 0d | Serkan Yılmaz | 1h |
| 305 | 3.1.3.4.3.2 | Firma ekleme form validasyonu (client side .net valitators) | 40min | 2007-06-07 17:00 | 2007-06-07 17:40 | 304 | 0d | Serkan Yılmaz | 0.67h |
| 306 | 3.1.3.4.3.3 | Yeni firma veritabanı kayıt | 40min | 2007-06-07 17:40 | 2007-06-08 08:50 | 305 | 0d | Serkan Yılmaz | 0.67h |
| 307 | 3.1.3.4.3.4 | Yeni firma kayıt öncesi validasyon kodu | 30min | 2007-06-08 08:50 | 2007-06-08 09:20 | 306 | 0d | Serkan Yılmaz | 0.5h |
| 308 | 3.1.3.4.3.5 | Yeni firma başarı ve hata mesajları | 20min | 2007-06-08 09:20 | 2007-06-08 09:40 | 307 | 0d | Serkan Yılmaz | 0.33h |
| 309 | 3.1.3.4.4 | **Firma silme** | 0.15d | 2007-06-08 09:40 | 2007-06-08 10:50 | 303 | 0d |  | 1.17h |
| 310 | 3.1.3.4.4.1 | Firma kullanılıyor mu kontrol kodu | 20min | 2007-06-08 09:40 | 2007-06-08 10:00 |  | 0d | Serkan Yılmaz | 0.33h |
| 311 | 3.1.3.4.4.2 | Firma kullanılmıyorsa silinmesi kodu | 30min | 2007-06-08 10:00 | 2007-06-08 10:30 | 310 | 0d | Serkan Yılmaz | 0.5h |
| 312 | 3.1.3.4.4.3 | Firma silme başarı ve hata mesajları | 20min | 2007-06-08 10:30 | 2007-06-08 10:50 | 311 | 0d | Serkan Yılmaz | 0.33h |

| ID | WBS | Task | Duration | Start | Finish | Predecessors | Total slack | Resources | Work |
| --- | --- | --- | --- | --- | --- | --- | --- | --- | --- |
| 313 | 3.1.3.4.5 | **Firmada değişiklik yapma** | 1d | 2007-06-08 10:50 | 2007-06-09 10:20 | 309 | 0d |  | 8h |
| 314 | 3.1.3.4.5.1 | Firma ekleme formunda değişiklikler yap | 40min | 2007-06-08 10:50 | 2007-06-08 11:30 |  | 0d | Serkan Yılmaz | 0.67h |
| 315 | 3.1.3.4.5.2 | Firma ekleme formu açıldığında veriler yüklensin | 10min | 2007-06-08 11:30 | 2007-06-08 11:40 | 314 | 0d | Serkan Yılmaz | 0.17h |
| 316 | 3.1.3.4.5.3 | Firma detaylarını listele | 30min | 2007-06-08 11:40 | 2007-06-08 13:10 | 315 | 0d | Serkan Yılmaz | 0.5h |
| 317 | 3.1.3.4.5.4 | **Kullanıcı yönetimi** | 0.62d | 2007-06-08 13:10 | 2007-06-09 08:40 | 316 | 0d |  | 5h |
| 318 | 3.1.3.4.5.4.1 | Kullanıcılar listesi | 2h | 2007-06-08 13:10 | 2007-06-08 15:10 |  | 0d | Serkan Yılmaz | 2h |
| 319 | 3.1.3.4.5.4.2 | Kullanıcı ekleme/değiştirme/silme (48) | 3h | 2007-06-08 15:10 | 2007-06-09 08:40 | 318 | 0d | Serkan Yılmaz | 3h |
| 320 | 3.1.3.4.5.5 | Firma güncelleme kodu | 1h | 2007-06-09 08:40 | 2007-06-09 09:40 | 317 | 0d | Serkan Yılmaz | 1h |
| 321 | 3.1.3.4.5.6 | Firmada değişiklik başarı ve hata mesajları | 40min | 2007-06-09 09:40 | 2007-06-09 10:20 | 320 | 0d | Serkan Yılmaz | 0.67h |
| 322 | 3.1.3.5 | **Otel Yönetim** | 9.54d | 2007-06-09 10:20 | 2007-06-20 10:10 | 296 | 0d |  | 73.33h |
| 323 | 3.1.3.5.1 | **Otelle ilgili nesneler** | 2.92d | 2007-06-09 10:20 | 2007-06-12 17:40 |  | 0d |  | 23.33h |
| 324 | 3.1.3.5.1.1 | Otel özelliği nesnesi | 40min | 2007-06-09 10:20 | 2007-06-09 11:00 |  | 0d | Serkan Yılmaz | 0.67h |
| 325 | 3.1.3.5.1.2 | Oda özelliği nesnesi | 40min | 2007-06-09 11:00 | 2007-06-09 11:40 | 324 | 0d | Serkan Yılmaz | 0.67h |
| 326 | 3.1.3.5.1.3 | Otel nesnesi | 6h | 2007-06-09 11:40 | 2007-06-11 09:10 | 325 | 0d | Serkan Yılmaz | 6h |
| 327 | 3.1.3.5.1.4 | Oda nesnesi | 2d | 2007-06-11 09:10 | 2007-06-12 17:40 | 326 | 0d | Serkan Yılmaz | 16h |
| 328 | 3.1.3.5.2 | **Otel Özellikleri** | 0.81d | 2007-06-12 17:40 | 2007-06-13 15:40 | 323 | 0d |  | 6.5h |
| 329 | 3.1.3.5.2.1 | **Otel Özelliklerini listele** | 0.21d | 2007-06-12 17:40 | 2007-06-13 09:50 |  | 0d |  | 1.67h |
| 330 | 3.1.3.5.2.1.1 | Otel özellikleri sayfası (html) | 1h | 2007-06-12 17:40 | 2007-06-13 09:10 |  | 0d | Serkan Yılmaz | 1h |
| 331 | 3.1.3.5.2.1.2 | Otel özellikleri sayfası (kodlama) | 30min | 2007-06-13 09:10 | 2007-06-13 09:40 | 330 | 0d | Serkan Yılmaz | 0.5h |
| 332 | 3.1.3.5.2.1.3 | Yeni otel özelliği, değiştir, sil bağlantıları | 10min | 2007-06-13 09:40 | 2007-06-13 09:50 | 331 | 0d | Serkan Yılmaz | 0.17h |
| 333 | 3.1.3.5.2.2 | **Yeni otel özelliği ekleme** | 0.29d | 2007-06-13 09:50 | 2007-06-13 13:10 | 329 | 0d |  | 2.33h |
| 334 | 3.1.3.5.2.2.1 | Otel özelliği ekleme formu (html) | 1h | 2007-06-13 09:50 | 2007-06-13 10:50 |  | 0d | Serkan Yılmaz | 1h |
| 335 | 3.1.3.5.2.2.2 | Otel özelliği ekleme formu validasyonu (client side .net valitators) | 20min | 2007-06-13 10:50 | 2007-06-13 11:10 | 334 | 0d | Serkan Yılmaz | 0.33h |
| 336 | 3.1.3.5.2.2.3 | Yeni otel özelliği veritabanı kayıt | 20min | 2007-06-13 11:10 | 2007-06-13 11:30 | 335 | 0d | Serkan Yılmaz | 0.33h |
| 337 | 3.1.3.5.2.2.4 | Yeni otel özelliği kayıt öncesi validasyon kodu | 20min | 2007-06-13 11:30 | 2007-06-13 11:50 | 336 | 0d | Serkan Yılmaz | 0.33h |
| 338 | 3.1.3.5.2.2.5 | Yeni otel özelliği başarı ve hata mesajları | 20min | 2007-06-13 11:50 | 2007-06-13 13:10 | 337 | 0d | Serkan Yılmaz | 0.33h |

| ID | WBS | Task | Duration | Start | Finish | Predecessors | Total slack | Resources | Work |
| --- | --- | --- | --- | --- | --- | --- | --- | --- | --- |
| 339 | 3.1.3.5.2.3 | **Otel özelliği silme** | 0.12d | 2007-06-13 13:10 | 2007-06-13 14:10 | 333 | 0d |  | 1h |
| 340 | 3.1.3.5.2.3.1 | Otel özelliği kullanılıyor mu kontrol kodu | 20min | 2007-06-13 13:10 | 2007-06-13 13:30 |  | 0d | Serkan Yılmaz | 0.33h |
| 341 | 3.1.3.5.2.3.2 | Otel özelliği kullanılmıyorsa silinmesi kodu | 20min | 2007-06-13 13:30 | 2007-06-13 13:50 | 340 | 0d | Serkan Yılmaz | 0.33h |
| 342 | 3.1.3.5.2.3.3 | Otel özelliği silme başarı ve hata mesajları | 20min | 2007-06-13 13:50 | 2007-06-13 14:10 | 341 | 0d | Serkan Yılmaz | 0.33h |
| 343 | 3.1.3.5.2.4 | **Otel özelliğinde değişiklik yapma** | 0.19d | 2007-06-13 14:10 | 2007-06-13 15:40 | 339 | 0d |  | 1.5h |
| 344 | 3.1.3.5.2.4.1 | Otel özelliği ekleme formunda değişiklikler yap | 40min | 2007-06-13 14:10 | 2007-06-13 14:50 |  | 0d | Serkan Yılmaz | 0.67h |
| 345 | 3.1.3.5.2.4.2 | Otel özelliği ekleme formu açıldığında veriler yüklensin | 10min | 2007-06-13 14:50 | 2007-06-13 15:00 | 344 | 0d | Serkan Yılmaz | 0.17h |
| 346 | 3.1.3.5.2.4.3 | Otel özelliği güncelleme kodu | 20min | 2007-06-13 15:00 | 2007-06-13 15:20 | 345 | 0d | Serkan Yılmaz | 0.33h |
| 347 | 3.1.3.5.2.4.4 | Otel özelliği değişiklik başarı ve hata mesajları | 20min | 2007-06-13 15:20 | 2007-06-13 15:40 | 346 | 0d | Serkan Yılmaz | 0.33h |
| 348 | 3.1.3.5.3 | **Oda Özellikleri** | 0.81d | 2007-06-13 15:40 | 2007-06-14 13:40 | 328 | 0d |  | 6.5h |
| 349 | 3.1.3.5.3.1 | **Oda Özelliklerini listele** | 0.21d | 2007-06-13 15:40 | 2007-06-13 17:20 |  | 0d |  | 1.67h |
| 350 | 3.1.3.5.3.1.1 | Oda özellikleri sayfası (html) | 1h | 2007-06-13 15:40 | 2007-06-13 16:40 |  | 0d | Serkan Yılmaz | 1h |
| 351 | 3.1.3.5.3.1.2 | Oda özellikleri sayfası (kodlama) | 30min | 2007-06-13 16:40 | 2007-06-13 17:10 | 350 | 0d | Serkan Yılmaz | 0.5h |
| 352 | 3.1.3.5.3.1.3 | Yeni oda özelliği, değiştir, sil bağlantıları | 10min | 2007-06-13 17:10 | 2007-06-13 17:20 | 351 | 0d | Serkan Yılmaz | 0.17h |
| 353 | 3.1.3.5.3.2 | **Yeni oda özelliği ekleme** | 0.29d | 2007-06-13 17:20 | 2007-06-14 10:10 | 349 | 0d |  | 2.33h |
| 354 | 3.1.3.5.3.2.1 | Oda özelliği ekleme formu (html) | 1h | 2007-06-13 17:20 | 2007-06-14 08:50 |  | 0d | Serkan Yılmaz | 1h |
| 355 | 3.1.3.5.3.2.2 | Oda özelliği ekleme formu validasyonu (client side .net valitators) | 20min | 2007-06-14 08:50 | 2007-06-14 09:10 | 354 | 0d | Serkan Yılmaz | 0.33h |
| 356 | 3.1.3.5.3.2.3 | Yeni oda özelliği veritabanı kayıt | 20min | 2007-06-14 09:10 | 2007-06-14 09:30 | 355 | 0d | Serkan Yılmaz | 0.33h |
| 357 | 3.1.3.5.3.2.4 | Yeni oda özelliği kayıt öncesi validasyon kodu | 20min | 2007-06-14 09:30 | 2007-06-14 09:50 | 356 | 0d | Serkan Yılmaz | 0.33h |
| 358 | 3.1.3.5.3.2.5 | Yeni oda özelliği başarı ve hata mesajları | 20min | 2007-06-14 09:50 | 2007-06-14 10:10 | 357 | 0d | Serkan Yılmaz | 0.33h |
| 359 | 3.1.3.5.3.3 | **Oda özelliği silme** | 0.12d | 2007-06-14 10:10 | 2007-06-14 11:10 | 353 | 0d |  | 1h |
| 360 | 3.1.3.5.3.3.1 | Oda özelliği kullanılıyor mu kontrol kodu | 20min | 2007-06-14 10:10 | 2007-06-14 10:30 |  | 0d | Serkan Yılmaz | 0.33h |
| 361 | 3.1.3.5.3.3.2 | Oda özelliği kullanılmıyorsa silinmesi kodu | 20min | 2007-06-14 10:30 | 2007-06-14 10:50 | 360 | 0d | Serkan Yılmaz | 0.33h |
| 362 | 3.1.3.5.3.3.3 | Oda özelliği silme başarı ve hata mesajları | 20min | 2007-06-14 10:50 | 2007-06-14 11:10 | 361 | 0d | Serkan Yılmaz | 0.33h |

| ID | WBS | Task | Duration | Start | Finish | Predecessors | Total slack | Resources | Work |
| --- | --- | --- | --- | --- | --- | --- | --- | --- | --- |
| 363 | 3.1.3.5.3.4 | **Oda özelliğinde değişiklik yapma** | 0.19d | 2007-06-14 11:10 | 2007-06-14 13:40 | 359 | 0d |  | 1.5h |
| 364 | 3.1.3.5.3.4.1 | Oda özelliği ekleme formunda değişiklikler yap | 40min | 2007-06-14 11:10 | 2007-06-14 11:50 |  | 0d | Serkan Yılmaz | 0.67h |
| 365 | 3.1.3.5.3.4.2 | Oda özelliği ekleme formu açıldığında veriler yüklensin | 10min | 2007-06-14 11:50 | 2007-06-14 12:00 | 364 | 0d | Serkan Yılmaz | 0.17h |
| 366 | 3.1.3.5.3.4.3 | Oda özelliği güncelleme kodu | 20min | 2007-06-14 13:00 | 2007-06-14 13:20 | 365 | 0d | Serkan Yılmaz | 0.33h |
| 367 | 3.1.3.5.3.4.4 | Oda özelliği değişiklik başarı ve hata mesajları | 20min | 2007-06-14 13:20 | 2007-06-14 13:40 | 366 | 0d | Serkan Yılmaz | 0.33h |
| 368 | 3.1.3.5.4 | **Otel** | 5d | 2007-06-14 13:40 | 2007-06-20 10:10 | 348 | 0d |  | 37h |
| 369 | 3.1.3.5.4.1 | **Oteller listele** | 0.65d | 2007-06-14 13:40 | 2007-06-15 09:20 |  | 0d |  | 5.17h |
| 370 | 3.1.3.5.4.1.1 | Oteller sayfası (html) | 3h | 2007-06-14 13:40 | 2007-06-14 16:40 |  | 0d | Serkan Yılmaz | 3h |
| 371 | 3.1.3.5.4.1.2 | Oteller sayfası (kodlama) | 2h | 2007-06-14 16:40 | 2007-06-15 09:10 | 370 | 0d | Serkan Yılmaz | 2h |
| 372 | 3.1.3.5.4.1.3 | Yeni otel, değiştir, sil bağlantıları | 10min | 2007-06-15 09:10 | 2007-06-15 09:20 | 371 | 0d | Serkan Yılmaz | 0.17h |
| 373 | 3.1.3.5.4.2 | **Yeni otel ekleme** | 3.33d | 2007-06-15 09:20 | 2007-06-19 10:30 | 369 | 0d |  | 26.67h |
| 374 | 3.1.3.5.4.2.1 | Otel ekleme formu (html) | 2h | 2007-06-15 09:20 | 2007-06-15 11:20 |  | 0d | Serkan Yılmaz | 2h |
| 375 | 3.1.3.5.4.2.2 | Otel ekleme formu validasyonu (client side .net valitators) | 1h | 2007-06-15 11:20 | 2007-06-15 13:20 | 374 | 0d | Serkan Yılmaz | 1h |
| 376 | 3.1.3.5.4.2.3 | **Otele ait odaların yönetimi** | 2.54d | 2007-06-15 13:20 | 2007-06-18 16:40 | 375 | 0d |  | 20.33h |
| 377 | 3.1.3.5.4.2.3.1 | **Odaları listele** | 0.52d | 2007-06-15 13:20 | 2007-06-15 17:30 |  | 0d |  | 4.17h |
| 378 | 3.1.3.5.4.2.3.1.1 | Odalar sayfası (html) | 2h | 2007-06-15 13:20 | 2007-06-15 15:20 |  | 0d | Serkan Yılmaz | 2h |
| 379 | 3.1.3.5.4.2.3.1.2 | Odalar sayfası (kodlama) | 2h | 2007-06-15 15:20 | 2007-06-15 17:20 | 378 | 0d | Serkan Yılmaz | 2h |
| 380 | 3.1.3.5.4.2.3.1.3 | Yeni oda, değiştir, sil bağlantıları | 10min | 2007-06-15 17:20 | 2007-06-15 17:30 | 379 | 0d | Serkan Yılmaz | 0.17h |
| 381 | 3.1.3.5.4.2.3.2 | **Yeni oda ekleme** | 1.46d | 2007-06-15 17:30 | 2007-06-18 11:10 | 377 | 0d |  | 11.67h |
| 382 | 3.1.3.5.4.2.3.2.1 | Oda ekleme formu (html) | 3h | 2007-06-15 17:30 | 2007-06-16 11:00 |  | 0d | Serkan Yılmaz | 3h |
| 383 | 3.1.3.5.4.2.3.2.2 | Oda ekleme formu validasyonu (client side .net valitators) | 1.5h | 2007-06-16 11:00 | 2007-06-16 13:30 | 382 | 0d | Serkan Yılmaz | 1.5h |
| 384 | 3.1.3.5.4.2.3.2.3 | Oda resimleri upload | 2h | 2007-06-16 13:30 | 2007-06-16 15:30 | 383 | 0d | Serkan Yılmaz | 2h |
| 385 | 3.1.3.5.4.2.3.2.4 | Yeni oda veritabanı kayıt | 2h | 2007-06-16 15:30 | 2007-06-16 17:30 | 384 | 0d | Serkan Yılmaz | 2h |
| 386 | 3.1.3.5.4.2.3.2.5 | Oda bilgilerini kaydet | 1.5h | 2007-06-16 17:30 | 2007-06-18 09:30 | 385 | 0d | Serkan Yılmaz | 1.5h |
| 387 | 3.1.3.5.4.2.3.2.6 | Yeni oda kayıt öncesi validasyon kodu | 1h | 2007-06-18 09:30 | 2007-06-18 10:30 | 386 | 0d | Serkan Yılmaz | 1h |
| 388 | 3.1.3.5.4.2.3.2.7 | Yeni oda başarı ve hata mesajları | 40min | 2007-06-18 10:30 | 2007-06-18 11:10 | 387 | 0d | Serkan Yılmaz | 0.67h |

| ID | WBS | Task | Duration | Start | Finish | Predecessors | Total slack | Resources | Work |
| --- | --- | --- | --- | --- | --- | --- | --- | --- | --- |
| 389 | 3.1.3.5.4.2.3.3 | **Oda silme** | 0.17d | 2007-06-18 11:10 | 2007-06-18 13:30 | 381 | 0d |  | 1.33h |
| 390 | 3.1.3.5.4.2.3.3.1 | Oda kullanılıyor mu kontrol kodu | 30min | 2007-06-18 11:10 | 2007-06-18 11:40 |  | 0d | Serkan Yılmaz | 0.5h |
| 391 | 3.1.3.5.4.2.3.3.2 | Oda kullanılmıyorsa silinmesi kodu | 30min | 2007-06-18 11:40 | 2007-06-18 13:10 | 390 | 0d | Serkan Yılmaz | 0.5h |
| 392 | 3.1.3.5.4.2.3.3.3 | Oda silme başarı ve hata mesajları | 20min | 2007-06-18 13:10 | 2007-06-18 13:30 | 391 | 0d | Serkan Yılmaz | 0.33h |
| 393 | 3.1.3.5.4.2.3.4 | **Odada değişiklik yapma** | 0.4d | 2007-06-18 13:30 | 2007-06-18 16:40 | 389 | 0d |  | 3.17h |
| 394 | 3.1.3.5.4.2.3.4.1 | Oda ekleme formunda değişiklikler yap | 1h | 2007-06-18 13:30 | 2007-06-18 14:30 |  | 0d | Serkan Yılmaz | 1h |
| 395 | 3.1.3.5.4.2.3.4.2 | Oda ekleme formu açıldığında veriler yüklensin | 30min | 2007-06-18 14:30 | 2007-06-18 15:00 | 394 | 0d | Serkan Yılmaz | 0.5h |
| 396 | 3.1.3.5.4.2.3.4.3 | Oda güncelleme kodu | 1h | 2007-06-18 15:00 | 2007-06-18 16:00 | 395 | 0d | Serkan Yılmaz | 1h |
| 397 | 3.1.3.5.4.2.3.4.4 | Oda değişiklik başarı ve hata mesajları | 40min | 2007-06-18 16:00 | 2007-06-18 16:40 | 396 | 0d | Serkan Yılmaz | 0.67h |
| 398 | 3.1.3.5.4.2.4 | Yeni otel veritabanı kayıt | 2h | 2007-06-18 16:40 | 2007-06-19 09:10 | 376 | 0d | Serkan Yılmaz | 2h |
| 399 | 3.1.3.5.4.2.5 | Yeni otel kayıt öncesi validasyon kodu | 40min | 2007-06-19 09:10 | 2007-06-19 09:50 | 398 | 0d | Serkan Yılmaz | 0.67h |
| 400 | 3.1.3.5.4.2.6 | Yeni otel başarı ve hata mesajları | 40min | 2007-06-19 09:50 | 2007-06-19 10:30 | 399 | 0d | Serkan Yılmaz | 0.67h |
| 401 | 3.1.3.5.4.3 | **Otel silme** | 0.23d | 2007-06-19 10:30 | 2007-06-19 13:20 | 373 | 0d |  | 1.83h |
| 402 | 3.1.3.5.4.3.1 | Otel kullanılıyor mu kontrol kodu | 40min | 2007-06-19 10:30 | 2007-06-19 11:10 |  | 0d | Serkan Yılmaz | 0.67h |
| 403 | 3.1.3.5.4.3.2 | Otel kullanılmıyorsa silinmesi kodu | 30min | 2007-06-19 11:10 | 2007-06-19 11:40 | 402 | 0d | Serkan Yılmaz | 0.5h |
| 404 | 3.1.3.5.4.3.3 | Otel silme başarı ve hata mesajları | 40min | 2007-06-19 11:40 | 2007-06-19 13:20 | 403 | 0d | Serkan Yılmaz | 0.67h |
| 405 | 3.1.3.5.4.4 | **Otelde değişiklik yapma** | 0.79d | 2007-06-19 13:20 | 2007-06-20 10:10 | 401 | 0d |  | 3.33h |
| 406 | 3.1.3.5.4.4.1 | Otel ekleme formunda değişiklikler yap | 1h | 2007-06-19 13:20 | 2007-06-19 14:20 |  | 0d | Serkan Yılmaz | 1h |
| 407 | 3.1.3.5.4.4.2 | Otel ekleme formu açıldığında veriler yüklensin | 40min | 2007-06-19 14:20 | 2007-06-19 15:00 | 406 | 0d | Serkan Yılmaz | 0.67h |
| 408 | 3.1.3.5.4.4.3 | Oda güncelleme | 3h | 2007-06-19 15:00 | 2007-06-19 18:00 | 407 | 0d |  |  |
| 409 | 3.1.3.5.4.4.4 | Otel güncelleme kodu | 1h | 2007-06-20 08:30 | 2007-06-20 09:30 | 408 | 0d | Serkan Yılmaz | 1h |
| 410 | 3.1.3.5.4.4.5 | Otel değişiklik başarı ve hata mesajları | 40min | 2007-06-20 09:30 | 2007-06-20 10:10 | 409 | 0d | Serkan Yılmaz | 0.67h |
| 411 | 3.1.3.6 | **Oda Fiyat Listelerinin Yönetimi** | 2.25d | 2007-06-20 10:10 | 2007-06-22 11:10 | 322 | 0d |  | 18h |
| 412 | 3.1.3.6.1 | Fiyat listesi ekleme / düzenleme formu | 6h | 2007-06-20 10:10 | 2007-06-20 17:10 |  | 0d | Serkan Yılmaz | 6h |
| 413 | 3.1.3.6.2 | Fiyat listesi otel ve oda bağlama formu | 4h | 2007-06-20 17:10 | 2007-06-21 11:40 | 412 | 0d | Serkan Yılmaz | 4h |
| 414 | 3.1.3.6.3 | Fiyat listesi veritabanı kayıt | 4h | 2007-06-21 11:40 | 2007-06-21 16:40 | 413 | 0d | Serkan Yılmaz | 4h |
| 415 | 3.1.3.6.4 | Fiyat listesine müşteri atama | 4h | 2007-06-21 16:40 | 2007-06-22 11:10 | 414 | 0d | Serkan Yılmaz | 4h |

| ID | WBS | Task | Duration | Start | Finish | Predecessors | Total slack | Resources | Work |
| --- | --- | --- | --- | --- | --- | --- | --- | --- | --- |
| 416 | 3.1.3.7 | **Tur Yönetimi** | 2.75d | 2007-06-22 11:10 | 2007-06-25 17:10 | 411 | 0d |  | 22h |
| 417 | 3.1.3.7.1 | **Turla ilgili nesneler** | 1d | 2007-06-22 11:10 | 2007-06-23 10:40 |  | 0d |  | 8h |
| 418 | 3.1.3.7.1.1 | Tur nesnesi | 1d | 2007-06-22 11:10 | 2007-06-23 10:40 |  | 0d | Serkan Yılmaz | 8h |
| 419 | 3.1.3.7.2 | **Turları listele** | 0.4d | 2007-06-23 10:40 | 2007-06-23 14:50 | 417 | 0d |  | 3.17h |
| 420 | 3.1.3.7.2.1 | Turlar sayfası (html) | 2h | 2007-06-23 10:40 | 2007-06-23 13:40 |  | 0d | Serkan Yılmaz | 2h |
| 421 | 3.1.3.7.2.2 | Turlar sayfası (kodlama) | 1h | 2007-06-23 13:40 | 2007-06-23 14:40 | 420 | 0d | Serkan Yılmaz | 1h |
| 422 | 3.1.3.7.2.3 | Yeni tur, değiştir, sil bağlantıları | 10min | 2007-06-23 14:40 | 2007-06-23 14:50 | 421 | 0d | Serkan Yılmaz | 0.17h |
| 423 | 3.1.3.7.3 | **Yeni tur ekleme** | 0.79d | 2007-06-23 14:50 | 2007-06-25 11:40 | 419 | 0d |  | 6.33h |
| 424 | 3.1.3.7.3.1 | Tur ekleme formu (html) | 3h | 2007-06-23 14:50 | 2007-06-23 17:50 |  | 0d | Serkan Yılmaz | 3h |
| 425 | 3.1.3.7.3.2 | Tur ekleme form validasyonu (client side .net valitators) | 40min | 2007-06-23 17:50 | 2007-06-25 09:00 | 424 | 0d | Serkan Yılmaz | 0.67h |
| 426 | 3.1.3.7.3.3 | Yeni tur veritabanı kayıt | 1.5h | 2007-06-25 09:00 | 2007-06-25 10:30 | 425 | 0d | Serkan Yılmaz | 1.5h |
| 427 | 3.1.3.7.3.4 | Yeni tur kayıt öncesi validasyon kodu | 30min | 2007-06-25 10:30 | 2007-06-25 11:00 | 426 | 0d | Serkan Yılmaz | 0.5h |
| 428 | 3.1.3.7.3.5 | Yeni tur başarı ve hata mesajları | 40min | 2007-06-25 11:00 | 2007-06-25 11:40 | 427 | 0d | Serkan Yılmaz | 0.67h |
| 429 | 3.1.3.7.4 | **Tur silme** | 0.17d | 2007-06-25 11:40 | 2007-06-25 14:00 | 423 | 0d |  | 1.33h |
| 430 | 3.1.3.7.4.1 | Tur kullanılıyor mu kontrol kodu | 30min | 2007-06-25 11:40 | 2007-06-25 13:10 |  | 0d | Serkan Yılmaz | 0.5h |
| 431 | 3.1.3.7.4.2 | Tur kullanılmıyorsa silinmesi kodu | 30min | 2007-06-25 13:10 | 2007-06-25 13:40 | 430 | 0d | Serkan Yılmaz | 0.5h |
| 432 | 3.1.3.7.4.3 | Tur silme başarı ve hata mesajları | 20min | 2007-06-25 13:40 | 2007-06-25 14:00 | 431 | 0d | Serkan Yılmaz | 0.33h |
| 433 | 3.1.3.7.5 | **Turda değişiklik yapma** | 0.4d | 2007-06-25 14:00 | 2007-06-25 17:10 | 429 | 0d |  | 3.17h |
| 434 | 3.1.3.7.5.1 | Tur ekleme formunda değişiklikler yap | 1h | 2007-06-25 14:00 | 2007-06-25 15:00 |  | 0d | Serkan Yılmaz | 1h |
| 435 | 3.1.3.7.5.2 | Tur ekleme formu açıldığında veriler yüklensin | 30min | 2007-06-25 15:00 | 2007-06-25 15:30 | 434 | 0d | Serkan Yılmaz | 0.5h |
| 436 | 3.1.3.7.5.3 | Tur güncelleme kodu | 1h | 2007-06-25 15:30 | 2007-06-25 16:30 | 435 | 0d | Serkan Yılmaz | 1h |
| 437 | 3.1.3.7.5.4 | Turda değişiklik başarı ve hata mesajları | 40min | 2007-06-25 16:30 | 2007-06-25 17:10 | 436 | 0d | Serkan Yılmaz | 0.67h |
| 438 | 3.1.3.8 | **Transfer Yönetimi** | 2.31d | 2007-06-25 17:10 | 2007-06-28 09:10 | 416 | 0d |  | 18.5h |
| 439 | 3.1.3.8.1 | **Transferle ilgili nesneler** | 1d | 2007-06-25 17:10 | 2007-06-26 16:40 |  | 0d |  | 8h |
| 440 | 3.1.3.8.1.1 | Transfer nesnesi | 6h | 2007-06-25 17:10 | 2007-06-26 14:40 |  | 0d | Serkan Yılmaz | 6h |
| 441 | 3.1.3.8.1.2 | Transfer araçları nesnesi | 2h | 2007-06-26 14:40 | 2007-06-26 16:40 | 440 | 0d | Serkan Yılmaz | 2h |

| ID | WBS | Task | Duration | Start | Finish | Predecessors | Total slack | Resources | Work |
| --- | --- | --- | --- | --- | --- | --- | --- | --- | --- |
| 442 | 3.1.3.8.2 | **Transferleri listele** | 0.4d | 2007-06-26 16:40 | 2007-06-27 10:20 | 439 | 0d |  | 3.17h |
| 443 | 3.1.3.8.2.1 | Transferler sayfası (html) | 2h | 2007-06-26 16:40 | 2007-06-27 09:10 |  | 0d | Serkan Yılmaz | 2h |
| 444 | 3.1.3.8.2.2 | Transferler sayfası (kodlama) | 1h | 2007-06-27 09:10 | 2007-06-27 10:10 | 443 | 0d | Serkan Yılmaz | 1h |
| 445 | 3.1.3.8.2.3 | Yeni Transfer, değiştir, sil bağlantıları | 10min | 2007-06-27 10:10 | 2007-06-27 10:20 | 444 | 0d | Serkan Yılmaz | 0.17h |
| 446 | 3.1.3.8.3 | **Yeni Transfer ekleme** | 0.5d | 2007-06-27 10:20 | 2007-06-27 15:20 | 442 | 0d |  | 4h |
| 447 | 3.1.3.8.3.1 | Transfer ekleme formu (html) | 2h | 2007-06-27 10:20 | 2007-06-27 13:20 |  | 0d | Serkan Yılmaz | 2h |
| 448 | 3.1.3.8.3.2 | Transfer ekleme form validasyonu (client side .net valitators) | 40min | 2007-06-27 13:20 | 2007-06-27 14:00 | 447 | 0d | Serkan Yılmaz | 0.67h |
| 449 | 3.1.3.8.3.3 | Yeni Transfer veritabanı kayıt | 40min | 2007-06-27 14:00 | 2007-06-27 14:40 | 448 | 0d | Serkan Yılmaz | 0.67h |
| 450 | 3.1.3.8.3.4 | Yeni Transfer kayıt öncesi validasyon kodu | 20min | 2007-06-27 14:40 | 2007-06-27 15:00 | 449 | 0d | Serkan Yılmaz | 0.33h |
| 451 | 3.1.3.8.3.5 | Yeni Transfer başarı ve hata mesajları | 20min | 2007-06-27 15:00 | 2007-06-27 15:20 | 450 | 0d | Serkan Yılmaz | 0.33h |
| 452 | 3.1.3.8.4 | **Transfer silme** | 0.12d | 2007-06-27 15:20 | 2007-06-27 16:20 | 446 | 0d |  | 1h |
| 453 | 3.1.3.8.4.1 | Transfer kullanılıyor mu kontrol kodu | 20min | 2007-06-27 15:20 | 2007-06-27 15:40 |  | 0d | Serkan Yılmaz | 0.33h |
| 454 | 3.1.3.8.4.2 | Transfer kullanılmıyorsa silinmesi kodu | 20min | 2007-06-27 15:40 | 2007-06-27 16:00 | 453 | 0d | Serkan Yılmaz | 0.33h |
| 455 | 3.1.3.8.4.3 | Transfer silme başarı ve hata mesajları | 20min | 2007-06-27 16:00 | 2007-06-27 16:20 | 454 | 0d | Serkan Yılmaz | 0.33h |
| 456 | 3.1.3.8.5 | **Transferde değişiklik yapma** | 0.29d | 2007-06-27 16:20 | 2007-06-28 09:10 | 452 | 0d |  | 2.33h |
| 457 | 3.1.3.8.5.1 | Transfer ekleme formunda değişiklikler yap | 1h | 2007-06-27 16:20 | 2007-06-27 17:20 |  | 0d | Serkan Yılmaz | 1h |
| 458 | 3.1.3.8.5.2 | Transfer ekleme formu açıldığında veriler yüklensin | 20min | 2007-06-27 17:20 | 2007-06-27 17:40 | 457 | 0d | Serkan Yılmaz | 0.33h |
| 459 | 3.1.3.8.5.3 | Transfer güncelleme kodu | 40min | 2007-06-27 17:40 | 2007-06-28 08:50 | 458 | 0d | Serkan Yılmaz | 0.67h |
| 460 | 3.1.3.8.5.4 | Transferde değişiklik başarı ve hata mesajları | 20min | 2007-06-28 08:50 | 2007-06-28 09:10 | 459 | 0d | Serkan Yılmaz | 0.33h |
| 461 | 3.1.3.9 | **Bülten** | 0.42d | 2007-06-28 09:10 | 2007-06-28 13:30 | 438 | 0d |  | 3.33h |
| 462 | 3.1.3.9.1 | Müşterilere bülten gönderme sayfası | 2h | 2007-06-28 09:10 | 2007-06-28 11:10 |  | 0d | Serkan Yılmaz | 2h |
| 463 | 3.1.3.9.2 | Yöneticiden kullanıcılara bülten gönderimi | 40min | 2007-06-28 11:10 | 2007-06-28 11:50 | 462 | 0d | Serkan Yılmaz | 0.67h |
| 464 | 3.1.3.9.3 | Bültenlerin mesaj kullanıcı mesaj kutusuna eklenmesi | 20min | 2007-06-28 11:50 | 2007-06-28 13:10 | 463 | 0d | Serkan Yılmaz | 0.33h |
| 465 | 3.1.3.9.4 | Bültenlerin mail olarak gönderimi | 20min | 2007-06-28 13:10 | 2007-06-28 13:30 | 464 | 0d | Serkan Yılmaz | 0.33h |

| ID | WBS | Task | Duration | Start | Finish | Predecessors | Total slack | Free slack | Resources | Work |
| --- | --- | --- | --- | --- | --- | --- | --- | --- | --- | --- |
| 466 | 3.1.3.10 | **Destek** | 0.5d | 2007-06-28 13:30 | 2007-06-28 17:30 | 461 | 0d |  |  | 4h |
| 467 | 3.1.3.10.1 | Destek talep formu | 1h | 2007-06-28 13:30 | 2007-06-28 14:30 |  | 0d |  | Serkan Yılmaz | 1h |
| 468 | 3.1.3.10.2 | Geçmiş destek talepleri ve cevapları listesi sayfası | 2h | 2007-06-28 14:30 | 2007-06-28 16:30 | 467 | 0d |  | Serkan Yılmaz | 2h |
| 469 | 3.1.3.10.3 | Destek mesajlarını okuma sayfası | 1h | 2007-06-28 16:30 | 2007-06-28 17:30 | 468 | 0d |  | Serkan Yılmaz | 1h |
| 470 | 3.1.3.10.4 | Destek talebine cevap verme sayfası | 2h | 2007-06-28 13:30 | 2007-06-28 15:30 |  | 0.25d |  |  |  |
| 471 | 3.1.4 | **COMMON** | 1d | 2007-05-26 17:00 | 2007-05-28 16:30 | 6 | 0d |  |  | 8h |
| 472 | 3.1.4.1 | CacheMachine | 3h | 2007-05-26 17:00 | 2007-05-28 10:30 |  | 0d |  | Serkan Yılmaz | 3h |
| 473 | 3.1.4.2 | SessionRoot | 2h | 2007-05-28 10:30 | 2007-05-28 13:30 | 472 | 0d |  | Serkan Yılmaz | 2h |
| 474 | 3.1.4.3 | ErrorHandler | 3h | 2007-05-28 13:30 | 2007-05-28 16:30 | 473 | 0d |  | Serkan Yılmaz | 3h |
| 475 | 4 | **Admin kısmı yardım içeriğini oluştur** | 1.5d | 2007-06-28 17:30 | 2007-06-30 11:30 | 110 | 0d |  |  | 12h |
| 476 | 4.1 | Yardım konuları | 4h | 2007-06-28 17:30 | 2007-06-29 12:00 |  | 0d |  | Serkan Yılmaz | 4h |
| 477 | 4.2 | Yardım içeriği | 1d | 2007-06-29 13:00 | 2007-06-30 11:30 | 476 | 0d |  | Serkan Yılmaz | 8h |
| 478 | 5 | **B2B kısmı yardım içeriğini oluştur** | 1.5d | 2007-06-13 10:02 | 2007-06-14 14:32 | 13 | 18.62d | 0d |  | 12h |
| 479 | 5.1 | Yardım konuları | 4h | 2007-06-13 10:02 | 2007-06-13 15:02 |  | 18.62d | 0d | Burak Uçakan | 4h |
| 480 | 5.2 | Yardım içeriği | 1d | 2007-06-13 15:02 | 2007-06-14 14:32 | 479 | 18.62d |  | Burak Uçakan | 8h |
| 481 | 6 | Program testleri | 2d | 2007-06-30 11:30 | 2007-07-03 10:30 | 475 | 0d |  | Serkan Yılmaz | 16h |
| 482 | 7 | Admin Dökümantasyonu | 1d | 2007-07-03 10:30 | 2007-07-04 10:00 | 481 | 0d |  | Serkan Yılmaz | 8h |
| 483 | 8 | B2B Dökümantasyonu | 1d | 2007-06-14 14:32 | 2007-06-15 14:02 | 478 | 18.62d | 0d | Burak Uçakan | 8h |
| 484 | 9 | Kullanıcı eğitimi | 1d | 2007-06-15 14:02 | 2007-06-16 13:32 | 483 | 18.62d |  |  |  |
| 485 | 10 | Deployment | 1d | 2007-07-04 10:00 | 2007-07-05 09:30 | 482 | 0d |  | Serkan Yılmaz | 8h |
| 486 | 11 | Deployment sonrası sistem testleri | 1d | 2007-07-05 09:30 | 2007-07-06 09:00 | 485 | 0d |  | Serkan Yılmaz | 8h |
| 487 | 12 | Kullanıcı testleri | 1d | 2007-07-06 09:00 | 2007-07-06 18:00 | 486 | 0d |  |  |  |
